# Crude Oil Gathering Station Expansion (synthetic)

Schedule from MS Project XML, 2026-07-10 to 2026-10-21, status date 2026-08-31, A marks actual dates.

## Schedule

| ID | WBS | Task | Duration | Start | Finish | Predecessors | Actual start | Actual finish | Area | Discipline | Activity ID |
| --- | --- | --- | --- | --- | --- | --- | --- | --- | --- | --- | --- |
| 1 | CGS-EXP-01 | **Crude Oil Gathering Station Expansion (synthetic)** | 104d | 2026-07-10 | 2026-10-21 |  |  |  |  |  |  |
| 2 | CGS-EXP-01.A1 | **A1 – Inlet Manifold & Separation** | 86d | 2026-07-22 | 2026-10-15 |  |  |  | A1 |  |  |
| 3 | CGS-EXP-01.A1.CIV | **Civil & Structural – A1** | 61d | 2026-07-22 | 2026-09-20 |  |  |  | A1 | civil |  |
| 4 | CGS-EXP-01.A1.CIV.K301 | **Foundation K-301 (gas compressor)** | 21d | 2026-08-01 | 2026-08-21 |  |  |  | A1 | civil |  |
| 5 | CGS-EXP-01.A1.CIV.K301 | Excavation for foundation K-301 | 3d | 2026-08-01 | 2026-08-03 |  | 2026-08-05 | 2026-08-07 | A1 | civil | CIV-A1-K301-EXC |
| 6 | CGS-EXP-01.A1.CIV.K301 | PCC for foundation K-301 | 1d | 2026-08-04 | 2026-08-04 | 5 | 2026-08-08 | 2026-08-08 | A1 | civil | CIV-A1-K301-PCC |
| 7 | CGS-EXP-01.A1.CIV.K301 | Reinforcement & shuttering foundation K-301 | 4d | 2026-08-06 | 2026-08-09 | 6FS+1d | 2026-08-11 | 2026-08-14 | A1 | civil | CIV-A1-K301-REB |
| 8 | CGS-EXP-01.A1.CIV.K301 | RCC concreting foundation K-301 | 2d | 2026-08-10 | 2026-08-11 | 7 | 2026-08-15 | 2026-08-17 | A1 | civil | CIV-A1-K301-RCC |
| 9 | CGS-EXP-01.A1.CIV.K301 | Backfilling around foundation K-301 | 3d | 2026-08-19 | 2026-08-21 | 8FS+7d | 2026-08-25 | 2026-08-28 | A1 | civil | CIV-A1-K301-BKF |
| 10 | CGS-EXP-01.A1.CIV.V101 | **Foundation V-101 (inlet separator)** | 21d | 2026-08-31 | 2026-09-20 |  |  |  | A1 | civil |  |
| 11 | CGS-EXP-01.A1.CIV.V101 | Excavation for foundation V-101 | 3d | 2026-08-31 | 2026-09-02 |  |  |  | A1 | civil | CIV-A1-V101-EXC |
| 12 | CGS-EXP-01.A1.CIV.V101 | PCC for foundation V-101 | 1d | 2026-09-03 | 2026-09-03 | 11 |  |  | A1 | civil | CIV-A1-V101-PCC |
| 13 | CGS-EXP-01.A1.CIV.V101 | Reinforcement & shuttering foundation V-101 | 4d | 2026-09-05 | 2026-09-08 | 12FS+1d |  |  | A1 | civil | CIV-A1-V101-REB |
| 14 | CGS-EXP-01.A1.CIV.V101 | RCC concreting foundation V-101 | 2d | 2026-09-09 | 2026-09-10 | 13 |  |  | A1 | civil | CIV-A1-V101-RCC |
| 15 | CGS-EXP-01.A1.CIV.V101 | Backfilling around foundation V-101 | 3d | 2026-09-18 | 2026-09-20 | 14FS+7d |  |  | A1 | civil | CIV-A1-V101-BKF |
| 16 | CGS-EXP-01.A1.CIV.V102 | **Foundation V-102 (test separator)** | 21d | 2026-08-17 | 2026-09-06 |  |  |  | A1 | civil |  |
| 17 | CGS-EXP-01.A1.CIV.V102 | Excavation for foundation V-102 | 3d | 2026-08-17 | 2026-08-19 |  | 2026-08-18 | 2026-08-21 | A1 | civil | CIV-A1-V102-EXC |
| 18 | CGS-EXP-01.A1.CIV.V102 | PCC for foundation V-102 | 1d | 2026-08-20 | 2026-08-20 | 17 | 2026-08-22 | 2026-08-22 | A1 | civil | CIV-A1-V102-PCC |
| 19 | CGS-EXP-01.A1.CIV.V102 | Reinforcement & shuttering foundation V-102 | 4d | 2026-08-22 | 2026-08-25 | 18FS+1d | 2026-08-24 | 2026-08-28 | A1 | civil | CIV-A1-V102-REB |
| 20 | CGS-EXP-01.A1.CIV.V102 | RCC concreting foundation V-102 | 2d | 2026-08-26 | 2026-08-27 | 19 | 2026-08-29 | 2026-08-31 | A1 | civil | CIV-A1-V102-RCC |
| 21 | CGS-EXP-01.A1.CIV.V102 | Backfilling around foundation V-102 | 3d | 2026-09-04 | 2026-09-06 | 20FS+7d |  |  | A1 | civil | CIV-A1-V102-BKF |
| 22 | CGS-EXP-01.A1.CIV.V103 | **Foundation V-103 (gas scrubber)** | 21d | 2026-08-24 | 2026-09-13 |  |  |  | A1 | civil |  |
| 23 | CGS-EXP-01.A1.CIV.V103 | Excavation for foundation V-103 | 3d | 2026-08-24 | 2026-08-26 |  | 2026-08-26 | 2026-08-29 | A1 | civil | CIV-A1-V103-EXC |
| 24 | CGS-EXP-01.A1.CIV.V103 | PCC for foundation V-103 | 1d | 2026-08-27 | 2026-08-27 | 23 | 2026-08-31 | 2026-08-31 | A1 | civil | CIV-A1-V103-PCC |
| 25 | CGS-EXP-01.A1.CIV.V103 | Reinforcement & shuttering foundation V-103 | 4d | 2026-08-29 | 2026-09-01 | 24FS+1d |  |  | A1 | civil | CIV-A1-V103-REB |
| 26 | CGS-EXP-01.A1.CIV.V103 | RCC concreting foundation V-103 | 2d | 2026-09-02 | 2026-09-03 | 25 |  |  | A1 | civil | CIV-A1-V103-RCC |
| 27 | CGS-EXP-01.A1.CIV.V103 | Backfilling around foundation V-103 | 3d | 2026-09-11 | 2026-09-13 | 26FS+7d |  |  | A1 | civil | CIV-A1-V103-BKF |

| ID | WBS | Task | Duration | Start | Finish | Predecessors | Actual start | Actual finish | Discipline | Area | Activity ID |
| --- | --- | --- | --- | --- | --- | --- | --- | --- | --- | --- | --- |
| 28 | CGS-EXP-01.A1.CIV.PR1 | **Pipe rack PR-1** | 30d | 2026-07-22 | 2026-08-20 |  |  |  | civil | A1 |  |
| 29 | CGS-EXP-01.A1.CIV.PR1 | Excavation & PCC for pipe rack PR-1 footings | 6d | 2026-07-22 A | 2026-07-27 |  |  | 2026-07-28 | civil | A1 | CIV-A1-PR1-FTG |
| 30 | CGS-EXP-01.A1.CIV.PR1 | RCC footings & pedestals pipe rack PR-1 | 8d | 2026-07-29 | 2026-08-05 | 29FS+1d | 2026-07-30 | 2026-08-08 | civil | A1 | CIV-A1-PR1-PED |
| 31 | CGS-EXP-01.A1.CIV.PR1 | Structural steel erection pipe rack PR-1 | 10d | 2026-08-11 | 2026-08-20 | 30FS+5d | 2026-08-14 | 2026-08-24 | civil | A1 | CIV-A1-PR1-STL |
| 32 | CGS-EXP-01.A1.PIP | **Piping – A1** | 64d | 2026-08-12 | 2026-10-14 |  |  |  | piping | A1 |  |
| 33 | CGS-EXP-01.A1.PIP.1101 | **Line 24"-P-1101-A1A** | 24d | 2026-09-09 | 2026-10-02 |  |  |  | piping | A1 |  |
| 34 | CGS-EXP-01.A1.PIP.1101 | Erect piping line 24"-P-1101-A1A | 11d | 2026-09-09 | 2026-09-19 |  |  |  | piping | A1 | PIP-A1-1101-ERC |
| 35 | CGS-EXP-01.A1.PIP.1101 | Welding & NDT line 24"-P-1101-A1A | 14d | 2026-09-11 | 2026-09-24 | 34SS+2d |  |  | piping | A1 | PIP-A1-1101-WLD |
| 36 | CGS-EXP-01.A1.PIP.1101 | Hydrotest line 24"-P-1101-A1A (TP-011) | 2d | 2026-09-28 | 2026-09-29 | 35FS+3d |  |  | piping | A1 | PIP-A1-1101-HT |
| 37 | CGS-EXP-01.A1.PIP.1101 | Reinstatement line 24"-P-1101-A1A | 2d | 2026-10-01 | 2026-10-02 | 36FS+1d |  |  | piping | A1 | PIP-A1-1101-RST |
| 38 | CGS-EXP-01.A1.PIP.1102 | **Line 18"-P-1102-A1A** | 24d | 2026-09-21 | 2026-10-14 |  |  |  | piping | A1 |  |
| 39 | CGS-EXP-01.A1.PIP.1102 | Erect piping line 18"-P-1102-A1A | 11d | 2026-09-21 | 2026-10-01 |  |  |  | piping | A1 | PIP-A1-1102-ERC |
| 40 | CGS-EXP-01.A1.PIP.1102 | Welding & NDT line 18"-P-1102-A1A | 14d | 2026-09-23 | 2026-10-06 | 39SS+2d |  |  | piping | A1 | PIP-A1-1102-WLD |
| 41 | CGS-EXP-01.A1.PIP.1102 | Hydrotest line 18"-P-1102-A1A (TP-012) | 2d | 2026-10-10 | 2026-10-11 | 40FS+3d |  |  | piping | A1 | PIP-A1-1102-HT |
| 42 | CGS-EXP-01.A1.PIP.1102 | Reinstatement line 18"-P-1102-A1A | 2d | 2026-10-13 | 2026-10-14 | 41FS+1d |  |  | piping | A1 | PIP-A1-1102-RST |
| 43 | CGS-EXP-01.A1.PIP.1103 | **Line 12"-G-1103-B1A** | 25d | 2026-09-20 | 2026-10-14 |  |  |  | piping | A1 |  |
| 44 | CGS-EXP-01.A1.PIP.1103 | Erect piping line 12"-G-1103-B1A | 12d | 2026-09-20 | 2026-10-01 |  |  |  | piping | A1 | PIP-A1-1103-ERC |
| 45 | CGS-EXP-01.A1.PIP.1103 | Welding & NDT line 12"-G-1103-B1A | 15d | 2026-09-22 | 2026-10-06 | 44SS+2d |  |  | piping | A1 | PIP-A1-1103-WLD |
| 46 | CGS-EXP-01.A1.PIP.1103 | Hydrotest line 12"-G-1103-B1A (TP-013) | 2d | 2026-10-10 | 2026-10-11 | 45FS+3d |  |  | piping | A1 | PIP-A1-1103-HT |
| 47 | CGS-EXP-01.A1.PIP.1103 | Reinstatement line 12"-G-1103-B1A | 2d | 2026-10-13 | 2026-10-14 | 46FS+1d |  |  | piping | A1 | PIP-A1-1103-RST |
| 48 | CGS-EXP-01.A1.PIP.1104 | **Line 8"-P-1104-A1A** | 31d | 2026-09-09 | 2026-10-09 |  |  |  | piping | A1 |  |
| 49 | CGS-EXP-01.A1.PIP.1104 | Erect piping line 8"-P-1104-A1A | 18d | 2026-09-09 | 2026-09-26 |  |  |  | piping | A1 | PIP-A1-1104-ERC |
| 50 | CGS-EXP-01.A1.PIP.1104 | Welding & NDT line 8"-P-1104-A1A | 21d | 2026-09-11 | 2026-10-01 | 49SS+2d |  |  | piping | A1 | PIP-A1-1104-WLD |
| 51 | CGS-EXP-01.A1.PIP.1104 | Hydrotest line 8"-P-1104-A1A (TP-014) | 2d | 2026-10-05 | 2026-10-06 | 50FS+3d |  |  | piping | A1 | PIP-A1-1104-HT |
| 52 | CGS-EXP-01.A1.PIP.1104 | Reinstatement line 8"-P-1104-A1A | 2d | 2026-10-08 | 2026-10-09 | 51FS+1d |  |  | piping | A1 | PIP-A1-1104-RST |

| ID | WBS | Task | Duration | Start | Finish | Predecessors | Actual start | Actual finish | Discipline | Area | Activity ID |
| --- | --- | --- | --- | --- | --- | --- | --- | --- | --- | --- | --- |
| 53 | CGS-EXP-01.A1.PIP.1105 | **Line 6"-W-1105-A1A** | 22d | 2026-09-01 | 2026-09-22 |  |  |  | piping | A1 |  |
| 54 | CGS-EXP-01.A1.PIP.1105 | Erect piping line 6"-W-1105-A1A | 9d | 2026-09-01 | 2026-09-09 |  | 2026-08-31 |  | piping | A1 | PIP-A1-1105-ERC |
| 55 | CGS-EXP-01.A1.PIP.1105 | Welding & NDT line 6"-W-1105-A1A | 12d | 2026-09-03 | 2026-09-14 | 54SS+2d |  |  | piping | A1 | PIP-A1-1105-WLD |
| 56 | CGS-EXP-01.A1.PIP.1105 | Hydrotest line 6"-W-1105-A1A (TP-015) | 2d | 2026-09-18 | 2026-09-19 | 55FS+3d |  |  | piping | A1 | PIP-A1-1105-HT |
| 57 | CGS-EXP-01.A1.PIP.1105 | Reinstatement line 6"-W-1105-A1A | 2d | 2026-09-21 | 2026-09-22 | 56FS+1d |  |  | piping | A1 | PIP-A1-1105-RST |
| 58 | CGS-EXP-01.A1.PIP.PS1 | **Pipe supports PR-1** | 24d | 2026-08-12 | 2026-09-04 |  |  |  | piping | A1 |  |
| 59 | CGS-EXP-01.A1.PIP.PS1 | Fabrication of pipe supports – pipe rack PR-1 | 10d | 2026-08-12 A | 2026-08-21 |  |  | 2026-08-25 | piping | A1 | PIP-A1-PS1-FAB |
| 60 | CGS-EXP-01.A1.PIP.PS1 | Erection of pipe supports – pipe rack PR-1 | 12d | 2026-08-24 | 2026-09-04 | 59FS+2d | 2026-08-28 |  | piping | A1 | PIP-A1-PS1-PSE |
| 61 | CGS-EXP-01.A1.SEQ | **Static Equipment – A1** | 63d | 2026-08-14 | 2026-10-15 |  |  |  | static_eq | A1 |  |
| 62 | CGS-EXP-01.A1.SEQ.V101 | **V-101 Inlet Separator** | 61d | 2026-08-16 | 2026-10-15 |  |  |  | static_eq | A1 |  |
| 63 | CGS-EXP-01.A1.SEQ.V101 | Receipt & inspection V-101 | 1d | 2026-08-16 | 2026-08-16 |  | 2026-08-15 | 2026-08-15 | static_eq | A1 | SEQ-A1-V101-RCV |
| 64 | CGS-EXP-01.A1.SEQ.V101 | Erection of inlet separator V-101 on foundation | 2d | 2026-09-21 | 2026-09-22 | 63FS+3d, 14FS+10d |  |  | static_eq | A1 | SEQ-A1-V101-ERC |
| 65 | CGS-EXP-01.A1.SEQ.V101 | Alignment & grouting V-101 | 3d | 2026-09-25 | 2026-09-27 | 64FS+2d |  |  | static_eq | A1 | SEQ-A1-V101-GRT |
| 66 | CGS-EXP-01.A1.SEQ.V101 | Installation of internals V-101 | 6d | 2026-10-01 | 2026-10-06 | 65FS+3d |  |  | static_eq | A1 | SEQ-A1-V101-INT |
| 67 | CGS-EXP-01.A1.SEQ.V101 | Final box-up V-101 | 1d | 2026-10-15 | 2026-10-15 | 66FS+8d |  |  | static_eq | A1 | SEQ-A1-V101-BOX |
| 68 | CGS-EXP-01.A1.SEQ.V102 | **V-102 Test Separator** | 49d | 2026-08-14 | 2026-10-01 |  |  |  | static_eq | A1 |  |
| 69 | CGS-EXP-01.A1.SEQ.V102 | Receipt & inspection V-102 | 1d | 2026-08-14 | 2026-08-14 |  | 2026-08-12 | 2026-08-12 | static_eq | A1 | SEQ-A1-V102-RCV |
| 70 | CGS-EXP-01.A1.SEQ.V102 | Erection of test separator V-102 on foundation | 2d | 2026-09-07 | 2026-09-08 | 69FS+3d, 20FS+10d |  |  | static_eq | A1 | SEQ-A1-V102-ERC |
| 71 | CGS-EXP-01.A1.SEQ.V102 | Alignment & grouting V-102 | 3d | 2026-09-11 | 2026-09-13 | 70FS+2d |  |  | static_eq | A1 | SEQ-A1-V102-GRT |
| 72 | CGS-EXP-01.A1.SEQ.V102 | Installation of internals V-102 | 6d | 2026-09-17 | 2026-09-22 | 71FS+3d |  |  | static_eq | A1 | SEQ-A1-V102-INT |
| 73 | CGS-EXP-01.A1.SEQ.V102 | Final box-up V-102 | 1d | 2026-10-01 | 2026-10-01 | 72FS+8d |  |  | static_eq | A1 | SEQ-A1-V102-BOX |
| 74 | CGS-EXP-01.A1.SEQ.V103 | **V-103 Gas Scrubber** | 40d | 2026-08-30 | 2026-10-08 |  |  |  | static_eq | A1 |  |
| 75 | CGS-EXP-01.A1.SEQ.V103 | Receipt & inspection V-103 | 1d | 2026-08-30 | 2026-08-30 |  | 2026-08-31 | 2026-08-31 | static_eq | A1 | SEQ-A1-V103-RCV |
| 76 | CGS-EXP-01.A1.SEQ.V103 | Erection of gas scrubber V-103 on foundation | 2d | 2026-09-14 | 2026-09-15 | 75FS+3d, 26FS+10d |  |  | static_eq | A1 | SEQ-A1-V103-ERC |
| 77 | CGS-EXP-01.A1.SEQ.V103 | Alignment & grouting V-103 | 3d | 2026-09-18 | 2026-09-20 | 76FS+2d |  |  | static_eq | A1 | SEQ-A1-V103-GRT |
| 78 | CGS-EXP-01.A1.SEQ.V103 | Installation of internals V-103 | 6d | 2026-09-24 | 2026-09-29 | 77FS+3d |  |  | static_eq | A1 | SEQ-A1-V103-INT |
| 79 | CGS-EXP-01.A1.SEQ.V103 | Final box-up V-103 | 1d | 2026-10-08 | 2026-10-08 | 78FS+8d |  |  | static_eq | A1 | SEQ-A1-V103-BOX |

| ID | WBS | Task | Duration | Start | Finish | Predecessors | Actual start | Actual finish | Discipline | Area | Activity ID |
| --- | --- | --- | --- | --- | --- | --- | --- | --- | --- | --- | --- |
| 80 | CGS-EXP-01.A1.ROT | **Rotating Equipment – A1** | 35d | 2026-08-22 | 2026-09-25 |  |  |  | rotating_eq | A1 |  |
| 81 | CGS-EXP-01.A1.ROT.K301 | **K-301 Gas Compressor Package** | 35d | 2026-08-22 | 2026-09-25 |  |  |  | rotating_eq | A1 |  |
| 82 | CGS-EXP-01.A1.ROT.K301 | **Install gas compressor package K-301** | 35d | 2026-08-22 | 2026-09-25 |  |  |  | rotating_eq | A1 |  |
| 83 | CGS-EXP-01.A1.ROT.K301 | Setting of compressor skid K-301 | 2d | 2026-08-22 | 2026-08-23 | 8FS+10d | 2026-08-28 | 2026-08-31 | rotating_eq | A1 | ROT-A1-K301-SKD |
| 84 | CGS-EXP-01.A1.ROT.K301 | Grouting compressor skid K-301 | 2d | 2026-08-26 | 2026-08-27 | 83FS+2d |  |  | rotating_eq | A1 | ROT-A1-K301-GRT |
| 85 | CGS-EXP-01.A1.ROT.K301 | Lube oil flushing K-301 | 7d | 2026-09-07 | 2026-09-13 | 84FS+10d |  |  | rotating_eq | A1 | ROT-A1-K301-LUB |
| 86 | CGS-EXP-01.A1.ROT.K301 | Alignment compressor-driver K-301 | 3d | 2026-09-16 | 2026-09-18 | 85FS+2d |  |  | rotating_eq | A1 | ROT-A1-K301-ALN |
| 87 | CGS-EXP-01.A1.ROT.K301 | Mechanical run test K-301 | 2d | 2026-09-24 | 2026-09-25 | 86FS+5d |  |  | rotating_eq | A1 | ROT-A1-K301-RUN |
| 88 | CGS-EXP-01.A1.ELE | **Electrical – A1** | 52d | 2026-08-15 | 2026-10-05 |  |  |  | electrical | A1 |  |
| 89 | CGS-EXP-01.A1.ELE.CLVA1 | **LV power cables Area-1** | 26d | 2026-09-09 | 2026-10-04 |  |  |  | electrical | A1 |  |
| 90 | CGS-EXP-01.A1.ELE.CLVA1 | Cable pulling – LV power cables Area-1 | 16d | 2026-09-09 | 2026-09-24 |  |  |  | electrical | A1 | ELE-A1-CLVA1-CBL |
| 91 | CGS-EXP-01.A1.ELE.CLVA1 | Glanding & termination – LV power cables Area-1 | 21d | 2026-09-14 | 2026-10-04 | 90SS+5d |  |  | electrical | A1 | ELE-A1-CLVA1-TRM |
| 92 | CGS-EXP-01.A1.ELE.ERT1 | **Earthing Area-1** | 12d | 2026-09-03 | 2026-09-14 |  |  |  | electrical | A1 |  |
| 93 | CGS-EXP-01.A1.ELE.ERT1 | Earthing – earth pits & grid, Area-1 | 12d | 2026-09-03 | 2026-09-14 |  |  |  | electrical | A1 | ELE-A1-ERT1-ERT |
| 94 | CGS-EXP-01.A1.ELE.TRY1 | **Cable Tray Area-1** | 15d | 2026-08-15 | 2026-08-29 |  |  |  | electrical | A1 |  |
| 95 | CGS-EXP-01.A1.ELE.TRY1 | Cable tray erection, Area-1 | 15d | 2026-08-15 | 2026-08-29 |  | 2026-08-20 |  | electrical | A1 | ELE-A1-TRY1-TRY |
| 96 | CGS-EXP-01.A1.ELE.LGT1 | **Area Lighting Area-1** | 10d | 2026-09-26 | 2026-10-05 |  |  |  | electrical | A1 |  |
| 97 | CGS-EXP-01.A1.ELE.LGT1 | Area lighting poles & fixtures, Area-1 | 10d | 2026-09-26 | 2026-10-05 |  |  |  | electrical | A1 | ELE-A1-LGT1-LGT |
| 98 | CGS-EXP-01.A1.INS | **Instrumentation – A1** | 50d | 2026-08-27 | 2026-10-15 |  |  |  | instrumentation | A1 |  |
| 99 | CGS-EXP-01.A1.INS.FT1101 | **FT-1101 Flow Transmitter** | 33d | 2026-09-13 | 2026-10-15 |  |  |  | instrumentation | A1 |  |
| 100 | CGS-EXP-01.A1.INS.FT1101 | Installation of flow transmitter FT-1101 | 2d | 2026-09-13 | 2026-09-14 |  |  |  | instrumentation | A1 | INS-A1-FT1101-INS |
| 101 | CGS-EXP-01.A1.INS.FT1101 | Impulse tubing FT-1101 | 3d | 2026-09-17 | 2026-09-19 | 100FS+2d |  |  | instrumentation | A1 | INS-A1-FT1101-TUB |
| 102 | CGS-EXP-01.A1.INS.FT1101 | Loop check FT-1101 | 1d | 2026-10-15 | 2026-10-15 | 101FS+25d |  |  | instrumentation | A1 | INS-A1-FT1101-LCK |
| 103 | CGS-EXP-01.A1.INS.PT1102 | **PT-1102 Pressure Transmitter** | 33d | 2026-09-03 | 2026-10-05 |  |  |  | instrumentation | A1 |  |
| 104 | CGS-EXP-01.A1.INS.PT1102 | Installation of pressure transmitter PT-1102 | 2d | 2026-09-03 | 2026-09-04 |  |  |  | instrumentation | A1 | INS-A1-PT1102-INS |
| 105 | CGS-EXP-01.A1.INS.PT1102 | Impulse tubing PT-1102 | 3d | 2026-09-07 | 2026-09-09 | 104FS+2d |  |  | instrumentation | A1 | INS-A1-PT1102-TUB |
| 106 | CGS-EXP-01.A1.INS.PT1102 | Loop check PT-1102 | 1d | 2026-10-05 | 2026-10-05 | 105FS+25d |  |  | instrumentation | A1 | INS-A1-PT1102-LCK |

| ID | WBS | Task | Duration | Start | Finish | Predecessors | Actual start | Actual finish | Discipline | Area | Activity ID |
| --- | --- | --- | --- | --- | --- | --- | --- | --- | --- | --- | --- |
| 107 | CGS-EXP-01.A1.INS.LT1103 | **LT-1103 Level Transmitter** | 33d | 2026-08-27 | 2026-09-28 |  |  |  | instrumentation | A1 |  |
| 108 | CGS-EXP-01.A1.INS.LT1103 | Installation of level transmitter LT-1103 | 2d | 2026-08-27 A | 2026-08-28 |  |  | 2026-08-29 | instrumentation | A1 | INS-A1-LT1103-INS |
| 109 | CGS-EXP-01.A1.INS.LT1103 | Impulse tubing LT-1103 | 3d | 2026-08-31 | 2026-09-02 | 108FS+2d |  |  | instrumentation | A1 | INS-A1-LT1103-TUB |
| 110 | CGS-EXP-01.A1.INS.LT1103 | Loop check LT-1103 | 1d | 2026-09-28 | 2026-09-28 | 109FS+25d |  |  | instrumentation | A1 | INS-A1-LT1103-LCK |
| 111 | CGS-EXP-01.A1.INS.PT1104 | **PT-1104 Pressure Transmitter** | 33d | 2026-08-28 | 2026-09-29 |  |  |  | instrumentation | A1 |  |
| 112 | CGS-EXP-01.A1.INS.PT1104 | Installation of pressure transmitter PT-1104 | 2d | 2026-08-28 | 2026-08-29 |  | 2026-08-31 |  | instrumentation | A1 | INS-A1-PT1104-INS |
| 113 | CGS-EXP-01.A1.INS.PT1104 | Impulse tubing PT-1104 | 3d | 2026-09-01 | 2026-09-03 | 112FS+2d |  |  | instrumentation | A1 | INS-A1-PT1104-TUB |
| 114 | CGS-EXP-01.A1.INS.PT1104 | Loop check PT-1104 | 1d | 2026-09-29 | 2026-09-29 | 113FS+25d |  |  | instrumentation | A1 | INS-A1-PT1104-LCK |
| 115 | CGS-EXP-01.A1.INS.TT1105 | **TT-1105 Temperature Transmitter** | 28d | 2026-09-06 | 2026-10-03 |  |  |  | instrumentation | A1 |  |
| 116 | CGS-EXP-01.A1.INS.TT1105 | Installation of temperature transmitter TT-1105 | 2d | 2026-09-06 | 2026-09-07 |  |  |  | instrumentation | A1 | INS-A1-TT1105-INS |
| 117 | CGS-EXP-01.A1.INS.TT1105 | Loop check TT-1105 | 1d | 2026-10-03 | 2026-10-03 | 116FS+25d |  |  | instrumentation | A1 | INS-A1-TT1105-LCK |
| 118 | CGS-EXP-01.A1.INS.JB101 | **Junction box JB-101** | 2d | 2026-09-15 | 2026-09-16 |  |  |  | instrumentation | A1 |  |
| 119 | CGS-EXP-01.A1.INS.JB101 | Installation of junction box JB-101 | 2d | 2026-09-15 | 2026-09-16 |  |  |  | instrumentation | A1 | INS-A1-JB101-INS |
| 120 | CGS-EXP-01.A1.INS.JB102 | **Junction box JB-102** | 2d | 2026-08-31 | 2026-09-01 |  |  |  | instrumentation | A1 |  |
| 121 | CGS-EXP-01.A1.INS.JB102 | Installation of junction box JB-102 | 2d | 2026-08-31 | 2026-09-01 |  |  |  | instrumentation | A1 | INS-A1-JB102-INS |
| 122 | CGS-EXP-01.A1.INS.ICB1 | **Instrument cables Area-1** | 12d | 2026-09-16 | 2026-09-27 |  |  |  | instrumentation | A1 |  |
| 123 | CGS-EXP-01.A1.INS.ICB1 | Instrument cable laying, Area-1 | 12d | 2026-09-16 | 2026-09-27 |  |  |  | instrumentation | A1 | INS-A1-ICB1-ICB |
| 124 | CGS-EXP-01.A1.HSE | **HSE & Fire Protection – A1** | 42d | 2026-09-04 | 2026-10-15 |  |  |  | hse | A1 |  |
| 125 | CGS-EXP-01.A1.HSE.GD101 | **Gas detector GD-101** | 1d | 2026-09-18 | 2026-09-18 |  |  |  | hse | A1 |  |
| 126 | CGS-EXP-01.A1.HSE.GD101 | Installation of gas detector GD-101 | 1d | 2026-09-18 | 2026-09-18 |  |  |  | hse | A1 | HSE-A1-GD101-INS |
| 127 | CGS-EXP-01.A1.HSE.GD102 | **Gas detector GD-102** | 1d | 2026-09-23 | 2026-09-23 |  |  |  | hse | A1 |  |
| 128 | CGS-EXP-01.A1.HSE.GD102 | Installation of gas detector GD-102 | 1d | 2026-09-23 | 2026-09-23 |  |  |  | hse | A1 | HSE-A1-GD102-INS |
| 129 | CGS-EXP-01.A1.HSE.HYD1 | **Fire hydrants Area-1** | 10d | 2026-09-04 | 2026-09-13 |  |  |  | hse | A1 |  |
| 130 | CGS-EXP-01.A1.HSE.HYD1 | Fire hydrants & monitors, Area-1 | 10d | 2026-09-04 | 2026-09-13 |  |  |  | hse | A1 | HSE-A1-HYD1-HYD |

| ID | WBS | Task | Duration | Start | Finish | Predecessors | Actual start | Actual finish | Discipline | Area | Activity ID |
| --- | --- | --- | --- | --- | --- | --- | --- | --- | --- | --- | --- |
| 131 | CGS-EXP-01.A1.HSE.SS101 | **Safety shower SS-101** | 2d | 2026-09-10 | 2026-09-11 |  |  |  | hse | A1 |  |
| 132 | CGS-EXP-01.A1.HSE.SS101 | Installation of safety shower & eyewash SS-101 | 2d | 2026-09-10 | 2026-09-11 |  |  |  | hse | A1 | HSE-A1-SS101-INS |
| 133 | CGS-EXP-01.A1.HSE.WS1 | **Windsock WS-1** | 1d | 2026-09-08 | 2026-09-08 |  |  |  | hse | A1 |  |
| 134 | CGS-EXP-01.A1.HSE.WS1 | Windsock installation WS-1 | 1d | 2026-09-08 | 2026-09-08 |  |  |  | hse | A1 | HSE-A1-WS1-INS |
| 135 | CGS-EXP-01.A1.HSE.FGL1 | **F&G loop check Area-1** | 5d | 2026-10-11 | 2026-10-15 |  |  |  | hse | A1 |  |
| 136 | CGS-EXP-01.A1.HSE.FGL1 | F&G system loop check, Area-1 | 5d | 2026-10-11 | 2026-10-15 |  |  |  | hse | A1 | HSE-A1-FGL1-FGL |
| 137 | CGS-EXP-01.A2 | **A2 – Electrical Substation** | 86d | 2026-07-16 | 2026-10-09 |  |  |  |  | A2 |  |
| 138 | CGS-EXP-01.A2.CIV | **Civil & Structural – A2** | 59d | 2026-07-16 | 2026-09-12 |  |  |  | civil | A2 |  |
| 139 | CGS-EXP-01.A2.CIV.SSB | **Substation building** | 48d | 2026-07-16 | 2026-09-01 |  |  |  | civil | A2 |  |
| 140 | CGS-EXP-01.A2.CIV.SSB | Substation building – plinth beam | 8d | 2026-07-16 | 2026-07-23 |  | 2026-07-18 | 2026-07-27 | civil | A2 | CIV-A2-SSB-PLN |
| 141 | CGS-EXP-01.A2.CIV.SSB | Substation building – column casting | 8d | 2026-07-25 | 2026-08-01 | 140FS+1d | 2026-07-29 | 2026-08-08 | civil | A2 | CIV-A2-SSB-COL |
| 142 | CGS-EXP-01.A2.CIV.SSB | Substation building – roof slab | 10d | 2026-08-04 | 2026-08-13 | 141FS+2d | 2026-08-11 | 2026-08-24 | civil | A2 | CIV-A2-SSB-ROF |
| 143 | CGS-EXP-01.A2.CIV.SSB | Substation building – brickwork | 10d | 2026-08-15 | 2026-08-24 | 142FS+1d | 2026-08-26 |  | civil | A2 | CIV-A2-SSB-BRK |
| 144 | CGS-EXP-01.A2.CIV.SSB | Substation building – plastering | 8d | 2026-08-25 | 2026-09-01 | 143 |  |  | civil | A2 | CIV-A2-SSB-PLS |
| 145 | CGS-EXP-01.A2.CIV.CTN | **Cable trench (north)** | 15d | 2026-08-21 | 2026-09-04 |  |  |  | civil | A2 |  |
| 146 | CGS-EXP-01.A2.CIV.CTN | Cable trench excavation – Cable trench (north) | 6d | 2026-08-21 | 2026-08-26 |  | 2026-08-24 | 2026-08-31 | civil | A2 | CIV-A2-CTN-EXC |
| 147 | CGS-EXP-01.A2.CIV.CTN | Cable trench PCC & walls – Cable trench (north) | 8d | 2026-08-28 | 2026-09-04 | 146FS+1d |  |  | civil | A2 | CIV-A2-CTN-WAL |
| 148 | CGS-EXP-01.A2.CIV.CTS | **Cable trench (south)** | 15d | 2026-08-29 | 2026-09-12 |  |  |  | civil | A2 |  |
| 149 | CGS-EXP-01.A2.CIV.CTS | Cable trench excavation – Cable trench (south) | 6d | 2026-08-29 A | 2026-09-03 |  |  |  | civil | A2 | CIV-A2-CTS-EXC |
| 150 | CGS-EXP-01.A2.CIV.CTS | Cable trench PCC & walls – Cable trench (south) | 8d | 2026-09-05 | 2026-09-12 | 149FS+1d |  |  | civil | A2 | CIV-A2-CTS-WAL |
| 151 | CGS-EXP-01.A2.ELE | **Electrical – A2** | 50d | 2026-08-21 | 2026-10-09 |  |  |  | electrical | A2 |  |
| 152 | CGS-EXP-01.A2.ELE.TR1 | **Transformer TR-1** | 2d | 2026-09-11 | 2026-09-12 |  |  |  | electrical | A2 |  |
| 153 | CGS-EXP-01.A2.ELE.TR1 | Placement of transformer TR-1 on plinth | 2d | 2026-09-11 | 2026-09-12 |  |  |  | electrical | A2 | ELE-A2-TR1-PLC |
| 154 | CGS-EXP-01.A2.ELE.TR2 | **Transformer TR-2** | 2d | 2026-09-10 | 2026-09-11 |  |  |  | electrical | A2 |  |
| 155 | CGS-EXP-01.A2.ELE.TR2 | Placement of transformer TR-2 on plinth | 2d | 2026-09-10 | 2026-09-11 |  |  |  | electrical | A2 | ELE-A2-TR2-PLC |

| ID | WBS | Task | Duration | Start | Finish | Predecessors | Actual start | Actual finish | Discipline | Area | Activity ID |
| --- | --- | --- | --- | --- | --- | --- | --- | --- | --- | --- | --- |
| 156 | CGS-EXP-01.A2.ELE.HTSWBD1 | **Ht Switchboard HT-SWBD-1** | 3d | 2026-08-25 | 2026-08-27 |  |  |  | electrical | A2 |  |
| 157 | CGS-EXP-01.A2.ELE.HTSWBD1 | Installation of HT switchboard HT-SWBD-1 | 3d | 2026-08-25 | 2026-08-27 |  |  |  | electrical | A2 | ELE-A2-HTSWBD1-INS |
| 158 | CGS-EXP-01.A2.ELE.MCC1 | **MCC PANEL MCC-1** | 3d | 2026-09-01 | 2026-09-03 |  |  |  | electrical | A2 |  |
| 159 | CGS-EXP-01.A2.ELE.MCC1 | Installation of MCC panel MCC-1 | 3d | 2026-09-01 | 2026-09-03 |  |  |  | electrical | A2 | ELE-A2-MCC1-INS |
| 160 | CGS-EXP-01.A2.ELE.MCC2 | **MCC PANEL MCC-2** | 3d | 2026-08-23 | 2026-08-25 |  |  |  | electrical | A2 |  |
| 161 | CGS-EXP-01.A2.ELE.MCC2 | Installation of MCC panel MCC-2 | 3d | 2026-08-23 | 2026-08-25 |  | 2026-08-26 | 2026-08-29 | electrical | A2 | ELE-A2-MCC2-INS |
| 162 | CGS-EXP-01.A2.ELE.PCC1 | **PCC PANEL PCC-1** | 3d | 2026-08-29 | 2026-08-31 |  |  |  | electrical | A2 |  |
| 163 | CGS-EXP-01.A2.ELE.PCC1 | Installation of PCC panel PCC-1 | 3d | 2026-08-29 | 2026-08-31 |  | 2026-08-31 |  | electrical | A2 | ELE-A2-PCC1-INS |
| 164 | CGS-EXP-01.A2.ELE.CMCC1 | **MCC-1 outgoing feeders** | 34d | 2026-09-01 | 2026-10-04 |  |  |  | electrical | A2 |  |
| 165 | CGS-EXP-01.A2.ELE.CMCC1 | Cable pulling – MCC-1 outgoing feeders | 20d | 2026-09-01 | 2026-09-20 |  |  |  | electrical | A2 | ELE-A2-CMCC1-CBL |
| 166 | CGS-EXP-01.A2.ELE.CMCC1 | Glanding & termination – MCC-1 outgoing feeders | 25d | 2026-09-06 | 2026-09-30 | 165SS+5d |  |  | electrical | A2 | ELE-A2-CMCC1-TRM |
| 167 | CGS-EXP-01.A2.ELE.CMCC1 | IR testing of cables – MCC-1 outgoing feeders | 2d | 2026-10-03 | 2026-10-04 | 166FS+2d |  |  | electrical | A2 | ELE-A2-CMCC1-IRT |
| 168 | CGS-EXP-01.A2.ELE.CMCC2 | **MCC-2 incomer & feeders** | 28d | 2026-08-28 | 2026-09-24 |  |  |  | electrical | A2 |  |
| 169 | CGS-EXP-01.A2.ELE.CMCC2 | Cable pulling – MCC-2 incomer & feeders | 14d | 2026-08-28 A | 2026-09-10 |  |  |  | electrical | A2 | ELE-A2-CMCC2-CBL |
| 170 | CGS-EXP-01.A2.ELE.CMCC2 | Glanding & termination – MCC-2 incomer & feeders | 19d | 2026-09-02 | 2026-09-20 | 169SS+5d |  |  | electrical | A2 | ELE-A2-CMCC2-TRM |
| 171 | CGS-EXP-01.A2.ELE.CMCC2 | IR testing of cables – MCC-2 incomer & feeders | 2d | 2026-09-23 | 2026-09-24 | 170FS+2d |  |  | electrical | A2 | ELE-A2-CMCC2-IRT |
| 172 | CGS-EXP-01.A2.ELE.CHTTR1 | **11 kV HT cable to TR-1** | 24d | 2026-09-12 | 2026-10-05 |  |  |  | electrical | A2 |  |
| 173 | CGS-EXP-01.A2.ELE.CHTTR1 | Cable pulling – 11 kV HT cable to TR-1 | 14d | 2026-09-12 | 2026-09-25 |  |  |  | electrical | A2 | ELE-A2-CHTTR1-CBL |
| 174 | CGS-EXP-01.A2.ELE.CHTTR1 | Glanding & termination – 11 kV HT cable to TR-1 | 19d | 2026-09-17 | 2026-10-05 | 173SS+5d |  |  | electrical | A2 | ELE-A2-CHTTR1-TRM |
| 175 | CGS-EXP-01.A2.ELE.CHTTR2 | **11 kV HT cable to TR-2** | 28d | 2026-09-12 | 2026-10-09 |  |  |  | electrical | A2 |  |
| 176 | CGS-EXP-01.A2.ELE.CHTTR2 | Cable pulling – 11 kV HT cable to TR-2 | 18d | 2026-09-12 | 2026-09-29 |  |  |  | electrical | A2 | ELE-A2-CHTTR2-CBL |
| 177 | CGS-EXP-01.A2.ELE.CHTTR2 | Glanding & termination – 11 kV HT cable to TR-2 | 23d | 2026-09-17 | 2026-10-09 | 176SS+5d |  |  | electrical | A2 | ELE-A2-CHTTR2-TRM |
| 178 | CGS-EXP-01.A2.ELE.ERT2 | **Earthing Area-2** | 12d | 2026-08-25 | 2026-09-05 |  |  |  | electrical | A2 |  |
| 179 | CGS-EXP-01.A2.ELE.ERT2 | Earthing – earth pits & grid, Area-2 | 12d | 2026-08-25 A | 2026-09-05 |  |  |  | electrical | A2 | ELE-A2-ERT2-ERT |

| ID | WBS | Task | Duration | Start | Finish | Predecessors | Actual start | Actual finish | Discipline | Area | Activity ID |
| --- | --- | --- | --- | --- | --- | --- | --- | --- | --- | --- | --- |
| 180 | CGS-EXP-01.A2.ELE.TRY2 | **Cable Tray Area-2** | 15d | 2026-08-21 | 2026-09-04 |  |  |  | electrical | A2 |  |
| 181 | CGS-EXP-01.A2.ELE.TRY2 | Cable tray erection, Area-2 | 15d | 2026-08-21 | 2026-09-04 |  | 2026-08-20 | 2026-08-31 | electrical | A2 | ELE-A2-TRY2-TRY |
| 182 | CGS-EXP-01.A2.ELE.LGT2 | **Area Lighting Area-2** | 10d | 2026-09-23 | 2026-10-02 |  |  |  | electrical | A2 |  |
| 183 | CGS-EXP-01.A2.ELE.LGT2 | Area lighting poles & fixtures, Area-2 | 10d | 2026-09-23 | 2026-10-02 |  |  |  | electrical | A2 | ELE-A2-LGT2-LGT |
| 184 | CGS-EXP-01.A2.INS | **Instrumentation – A2** | 5d | 2026-08-30 | 2026-09-03 |  |  |  | instrumentation | A2 |  |
| 185 | CGS-EXP-01.A2.INS.DCS | **DCS cabinets (CCR)** | 5d | 2026-08-30 | 2026-09-03 |  |  |  | instrumentation | A2 |  |
| 186 | CGS-EXP-01.A2.INS.DCS | Installation of DCS cabinets in CCR | 5d | 2026-08-30 | 2026-09-03 |  | 2026-08-31 |  | instrumentation | A2 | INS-A2-DCS-DCS |
| 187 | CGS-EXP-01.A2.INS.MC1 | **Marshalling cabinet MC-1** | 3d | 2026-08-31 | 2026-09-02 |  |  |  | instrumentation | A2 |  |
| 188 | CGS-EXP-01.A2.INS.MC1 | Installation of marshalling cabinet MC-1 | 3d | 2026-08-31 | 2026-09-02 |  |  |  | instrumentation | A2 | INS-A2-MC1-INS |
| 189 | CGS-EXP-01.A2.HSE | **HSE & Fire Protection – A2** | 2d | 2026-09-02 | 2026-09-03 |  |  |  | hse | A2 |  |
| 190 | CGS-EXP-01.A2.HSE.FAP1 | **Fire alarm panel FAP-1** | 2d | 2026-09-02 | 2026-09-03 |  |  |  | hse | A2 |  |
| 191 | CGS-EXP-01.A2.HSE.FAP1 | Installation of fire alarm panel FAP-1 | 2d | 2026-09-02 | 2026-09-03 |  |  |  | hse | A2 | HSE-A2-FAP1-INS |
| 192 | CGS-EXP-01.A3 | **A3 – Process Pipe Rack & Pump House** | 101d | 2026-07-13 | 2026-10-21 |  |  |  |  | A3 |  |
| 193 | CGS-EXP-01.A3.CIV | **Civil & Structural – A3** | 62d | 2026-07-13 | 2026-09-12 |  |  |  | civil | A3 |  |
| 194 | CGS-EXP-01.A3.CIV.P101A | **Foundation P-101A (crude transfer pump)** | 21d | 2026-07-24 | 2026-08-13 |  |  |  | civil | A3 |  |
| 195 | CGS-EXP-01.A3.CIV.P101A | Excavation for foundation P-101A | 3d | 2026-07-24 A | 2026-07-26 |  |  | 2026-07-27 | civil | A3 | CIV-A3-P101A-EXC |
| 196 | CGS-EXP-01.A3.CIV.P101A | PCC for foundation P-101A | 1d | 2026-07-27 | 2026-07-27 | 195 | 2026-07-28 | 2026-07-28 | civil | A3 | CIV-A3-P101A-PCC |
| 197 | CGS-EXP-01.A3.CIV.P101A | Reinforcement & shuttering foundation P-101A | 4d | 2026-07-29 | 2026-08-01 | 196FS+1d | 2026-07-30 | 2026-08-03 | civil | A3 | CIV-A3-P101A-REB |
| 198 | CGS-EXP-01.A3.CIV.P101A | RCC concreting foundation P-101A | 2d | 2026-08-02 | 2026-08-03 | 197 | 2026-08-04 | 2026-08-05 | civil | A3 | CIV-A3-P101A-RCC |
| 199 | CGS-EXP-01.A3.CIV.P101A | Backfilling around foundation P-101A | 3d | 2026-08-11 | 2026-08-13 | 198FS+7d | 2026-08-13 | 2026-08-15 | civil | A3 | CIV-A3-P101A-BKF |
| 200 | CGS-EXP-01.A3.CIV.P101B | **Foundation P-101B (crude transfer pump)** | 21d | 2026-07-26 | 2026-08-15 |  |  |  | civil | A3 |  |
| 201 | CGS-EXP-01.A3.CIV.P101B | Excavation for foundation P-101B | 3d | 2026-07-26 | 2026-07-28 |  | 2026-07-29 | 2026-08-01 | civil | A3 | CIV-A3-P101B-EXC |
| 202 | CGS-EXP-01.A3.CIV.P101B | PCC for foundation P-101B | 1d | 2026-07-29 | 2026-07-29 | 201 | 2026-08-03 | 2026-08-03 | civil | A3 | CIV-A3-P101B-PCC |
| 203 | CGS-EXP-01.A3.CIV.P101B | Reinforcement & shuttering foundation P-101B | 4d | 2026-07-31 | 2026-08-03 | 202FS+1d | 2026-08-05 | 2026-08-08 | civil | A3 | CIV-A3-P101B-REB |
| 204 | CGS-EXP-01.A3.CIV.P101B | RCC concreting foundation P-101B | 2d | 2026-08-04 | 2026-08-05 | 203 | 2026-08-10 | 2026-08-11 | civil | A3 | CIV-A3-P101B-RCC |
| 205 | CGS-EXP-01.A3.CIV.P101B | Backfilling around foundation P-101B | 3d | 2026-08-13 | 2026-08-15 | 204FS+7d | 2026-08-19 | 2026-08-21 | civil | A3 | CIV-A3-P101B-BKF |

| ID | WBS | Task | Duration | Start | Finish | Predecessors | Actual start | Actual finish | Discipline | Area | Activity ID |
| --- | --- | --- | --- | --- | --- | --- | --- | --- | --- | --- | --- |
| 206 | CGS-EXP-01.A3.CIV.P102A | **Foundation P-102A (produced water pump)** | 21d | 2026-08-08 | 2026-08-28 |  |  |  | civil | A3 |  |
| 207 | CGS-EXP-01.A3.CIV.P102A | Excavation for foundation P-102A | 3d | 2026-08-08 A | 2026-08-10 |  |  | 2026-08-11 | civil | A3 | CIV-A3-P102A-EXC |
| 208 | CGS-EXP-01.A3.CIV.P102A | PCC for foundation P-102A | 1d | 2026-08-11 | 2026-08-11 | 207 | 2026-08-12 | 2026-08-12 | civil | A3 | CIV-A3-P102A-PCC |
| 209 | CGS-EXP-01.A3.CIV.P102A | Reinforcement & shuttering foundation P-102A | 4d | 2026-08-13 | 2026-08-16 | 208FS+1d | 2026-08-15 | 2026-08-18 | civil | A3 | CIV-A3-P102A-REB |
| 210 | CGS-EXP-01.A3.CIV.P102A | RCC concreting foundation P-102A | 2d | 2026-08-17 | 2026-08-18 | 209 | 2026-08-20 | 2026-08-21 | civil | A3 | CIV-A3-P102A-RCC |
| 211 | CGS-EXP-01.A3.CIV.P102A | Backfilling around foundation P-102A | 3d | 2026-08-26 | 2026-08-28 | 210FS+7d | 2026-08-31 |  | civil | A3 | CIV-A3-P102A-BKF |
| 212 | CGS-EXP-01.A3.CIV.P102B | **Foundation P-102B (produced water pump)** | 21d | 2026-08-08 | 2026-08-28 |  |  |  | civil | A3 |  |
| 213 | CGS-EXP-01.A3.CIV.P102B | Excavation for foundation P-102B | 3d | 2026-08-08 A | 2026-08-10 A |  |  |  | civil | A3 | CIV-A3-P102B-EXC |
| 214 | CGS-EXP-01.A3.CIV.P102B | PCC for foundation P-102B | 1d | 2026-08-11 | 2026-08-11 | 213 | 2026-08-13 | 2026-08-13 | civil | A3 | CIV-A3-P102B-PCC |
| 215 | CGS-EXP-01.A3.CIV.P102B | Reinforcement & shuttering foundation P-102B | 4d | 2026-08-13 | 2026-08-16 | 214FS+1d | 2026-08-15 | 2026-08-18 | civil | A3 | CIV-A3-P102B-REB |
| 216 | CGS-EXP-01.A3.CIV.P102B | RCC concreting foundation P-102B | 2d | 2026-08-17 | 2026-08-18 | 215 | 2026-08-20 | 2026-08-22 | civil | A3 | CIV-A3-P102B-RCC |
| 217 | CGS-EXP-01.A3.CIV.P102B | Backfilling around foundation P-102B | 3d | 2026-08-26 | 2026-08-28 | 216FS+7d | 2026-08-31 |  | civil | A3 | CIV-A3-P102B-BKF |
| 218 | CGS-EXP-01.A3.CIV.E101 | **Foundation E-101 (crude heat exchanger)** | 21d | 2026-07-24 | 2026-08-13 |  |  |  | civil | A3 |  |
| 219 | CGS-EXP-01.A3.CIV.E101 | Excavation for foundation E-101 | 3d | 2026-07-24 | 2026-07-26 |  | 2026-07-27 | 2026-07-30 | civil | A3 | CIV-A3-E101-EXC |
| 220 | CGS-EXP-01.A3.CIV.E101 | PCC for foundation E-101 | 1d | 2026-07-27 | 2026-07-27 | 219 | 2026-08-01 | 2026-08-01 | civil | A3 | CIV-A3-E101-PCC |
| 221 | CGS-EXP-01.A3.CIV.E101 | Reinforcement & shuttering foundation E-101 | 4d | 2026-07-29 | 2026-08-01 | 220FS+1d | 2026-08-05 | 2026-08-10 | civil | A3 | CIV-A3-E101-REB |
| 222 | CGS-EXP-01.A3.CIV.E101 | RCC concreting foundation E-101 | 2d | 2026-08-02 | 2026-08-03 | 221 | 2026-08-11 | 2026-08-12 | civil | A3 | CIV-A3-E101-RCC |
| 223 | CGS-EXP-01.A3.CIV.E101 | Backfilling around foundation E-101 | 3d | 2026-08-11 | 2026-08-13 | 222FS+7d | 2026-08-20 | 2026-08-24 | civil | A3 | CIV-A3-E101-BKF |
| 224 | CGS-EXP-01.A3.CIV.PR2 | **Pipe rack PR-2** | 30d | 2026-07-13 | 2026-08-11 |  |  |  | civil | A3 |  |
| 225 | CGS-EXP-01.A3.CIV.PR2 | Excavation & PCC for pipe rack PR-2 footings | 6d | 2026-07-13 | 2026-07-18 |  | 2026-07-16 | 2026-07-22 | civil | A3 | CIV-A3-PR2-FTG |
| 226 | CGS-EXP-01.A3.CIV.PR2 | RCC footings & pedestals pipe rack PR-2 | 8d | 2026-07-20 | 2026-07-27 | 225FS+1d | 2026-07-24 | 2026-07-30 | civil | A3 | CIV-A3-PR2-PED |
| 227 | CGS-EXP-01.A3.CIV.PR2 | Structural steel erection pipe rack PR-2 | 10d | 2026-08-02 | 2026-08-11 | 226FS+5d | 2026-08-07 | 2026-08-15 | civil | A3 | CIV-A3-PR2-STL |
| 228 | CGS-EXP-01.A3.CIV.PR3 | **Pipe rack PR-3** | 30d | 2026-08-07 | 2026-09-05 |  |  |  | civil | A3 |  |
| 229 | CGS-EXP-01.A3.CIV.PR3 | Excavation & PCC for pipe rack PR-3 footings | 6d | 2026-08-07 | 2026-08-12 |  | 2026-08-17 | 2026-08-24 | civil | A3 | CIV-A3-PR3-FTG |
| 230 | CGS-EXP-01.A3.CIV.PR3 | RCC footings & pedestals pipe rack PR-3 | 8d | 2026-08-14 | 2026-08-21 | 229FS+1d | 2026-08-26 |  | civil | A3 | CIV-A3-PR3-PED |
| 231 | CGS-EXP-01.A3.CIV.PR3 | Structural steel erection pipe rack PR-3 | 10d | 2026-08-27 | 2026-09-05 | 230FS+5d |  |  | civil | A3 | CIV-A3-PR3-STL |

| ID | WBS | Task | Duration | Start | Finish | Predecessors | Discipline | Area | Activity ID |
| --- | --- | --- | --- | --- | --- | --- | --- | --- | --- |
| 232 | CGS-EXP-01.A3.CIV.SWD3 | **Storm water drain Area-3** | 12d | 2026-09-01 | 2026-09-12 |  | civil | A3 |  |
| 233 | CGS-EXP-01.A3.CIV.SWD3 | Storm water drain – Area-3 | 12d | 2026-09-01 | 2026-09-12 |  | civil | A3 | CIV-A3-SWD3-SWD |
| 234 | CGS-EXP-01.A3.PIP | **Piping – A3** | 63d | 2026-08-12 | 2026-10-13 |  | piping | A3 |  |
| 235 | CGS-EXP-01.A3.PIP.1201 | **Line 24"-P-1201-A1A** | 19d | 2026-09-20 | 2026-10-08 |  | piping | A3 |  |
| 236 | CGS-EXP-01.A3.PIP.1201 | Erect piping line 24"-P-1201-A1A | 6d | 2026-09-20 | 2026-09-25 |  | piping | A3 | PIP-A3-1201-ERC |
| 237 | CGS-EXP-01.A3.PIP.1201 | Welding & NDT line 24"-P-1201-A1A | 9d | 2026-09-22 | 2026-09-30 | 236SS+2d | piping | A3 | PIP-A3-1201-WLD |
| 238 | CGS-EXP-01.A3.PIP.1201 | Hydrotest line 24"-P-1201-A1A (TP-016) | 2d | 2026-10-04 | 2026-10-05 | 237FS+3d | piping | A3 | PIP-A3-1201-HT |
| 239 | CGS-EXP-01.A3.PIP.1201 | Reinstatement line 24"-P-1201-A1A | 2d | 2026-10-07 | 2026-10-08 | 238FS+1d | piping | A3 | PIP-A3-1201-RST |
| 240 | CGS-EXP-01.A3.PIP.1203 | **Line 24"-P-1203-A1A** | 25d | 2026-09-06 | 2026-09-30 |  | piping | A3 |  |
| 241 | CGS-EXP-01.A3.PIP.1203 | Erect piping line 24"-P-1203-A1A | 12d | 2026-09-06 | 2026-09-17 |  | piping | A3 | PIP-A3-1203-ERC |
| 242 | CGS-EXP-01.A3.PIP.1203 | Welding & NDT line 24"-P-1203-A1A | 15d | 2026-09-08 | 2026-09-22 | 241SS+2d | piping | A3 | PIP-A3-1203-WLD |
| 243 | CGS-EXP-01.A3.PIP.1203 | Hydrotest line 24"-P-1203-A1A (TP-017) | 2d | 2026-09-26 | 2026-09-27 | 242FS+3d | piping | A3 | PIP-A3-1203-HT |
| 244 | CGS-EXP-01.A3.PIP.1203 | Reinstatement line 24"-P-1203-A1A | 2d | 2026-09-29 | 2026-09-30 | 243FS+1d | piping | A3 | PIP-A3-1203-RST |
| 245 | CGS-EXP-01.A3.PIP.1205 | **Line 18"-P-1205-A1A** | 31d | 2026-09-13 | 2026-10-13 |  | piping | A3 |  |
| 246 | CGS-EXP-01.A3.PIP.1205 | Erect piping line 18"-P-1205-A1A | 18d | 2026-09-13 | 2026-09-30 |  | piping | A3 | PIP-A3-1205-ERC |
| 247 | CGS-EXP-01.A3.PIP.1205 | Welding & NDT line 18"-P-1205-A1A | 21d | 2026-09-15 | 2026-10-05 | 246SS+2d | piping | A3 | PIP-A3-1205-WLD |
| 248 | CGS-EXP-01.A3.PIP.1205 | Hydrotest line 18"-P-1205-A1A (TP-018) | 2d | 2026-10-09 | 2026-10-10 | 247FS+3d | piping | A3 | PIP-A3-1205-HT |
| 249 | CGS-EXP-01.A3.PIP.1205 | Reinstatement line 18"-P-1205-A1A | 2d | 2026-10-12 | 2026-10-13 | 248FS+1d | piping | A3 | PIP-A3-1205-RST |
| 250 | CGS-EXP-01.A3.PIP.1207 | **Line 16"-P-1207-A1A** | 24d | 2026-09-06 | 2026-09-29 |  | piping | A3 |  |
| 251 | CGS-EXP-01.A3.PIP.1207 | Erect piping line 16"-P-1207-A1A | 11d | 2026-09-06 | 2026-09-16 |  | piping | A3 | PIP-A3-1207-ERC |
| 252 | CGS-EXP-01.A3.PIP.1207 | Welding & NDT line 16"-P-1207-A1A | 14d | 2026-09-08 | 2026-09-21 | 251SS+2d | piping | A3 | PIP-A3-1207-WLD |
| 253 | CGS-EXP-01.A3.PIP.1207 | Hydrotest line 16"-P-1207-A1A (TP-019) | 2d | 2026-09-25 | 2026-09-26 | 252FS+3d | piping | A3 | PIP-A3-1207-HT |
| 254 | CGS-EXP-01.A3.PIP.1207 | Reinstatement line 16"-P-1207-A1A | 2d | 2026-09-28 | 2026-09-29 | 253FS+1d | piping | A3 | PIP-A3-1207-RST |
| 255 | CGS-EXP-01.A3.PIP.1211 | **Line 16"-P-1211-A1A** | 19d | 2026-08-31 | 2026-09-18 |  | piping | A3 |  |
| 256 | CGS-EXP-01.A3.PIP.1211 | Erect piping line 16"-P-1211-A1A | 6d | 2026-08-31 A | 2026-09-05 |  | piping | A3 | PIP-A3-1211-ERC |
| 257 | CGS-EXP-01.A3.PIP.1211 | Welding & NDT line 16"-P-1211-A1A | 9d | 2026-09-02 | 2026-09-10 | 256SS+2d | piping | A3 | PIP-A3-1211-WLD |
| 258 | CGS-EXP-01.A3.PIP.1211 | Hydrotest line 16"-P-1211-A1A (TP-020) | 2d | 2026-09-14 | 2026-09-15 | 257FS+3d | piping | A3 | PIP-A3-1211-HT |
| 259 | CGS-EXP-01.A3.PIP.1211 | Reinstatement line 16"-P-1211-A1A | 2d | 2026-09-17 | 2026-09-18 | 258FS+1d | piping | A3 | PIP-A3-1211-RST |

| ID | WBS | Task | Duration | Start | Finish | Predecessors | Actual start | Actual finish | Discipline | Area | Activity ID |
| --- | --- | --- | --- | --- | --- | --- | --- | --- | --- | --- | --- |
| 260 | CGS-EXP-01.A3.PIP.1213 | **Line 12"-P-1213-A1A** | 27d | 2026-08-31 | 2026-09-26 |  |  |  | piping | A3 |  |
| 261 | CGS-EXP-01.A3.PIP.1213 | Erect piping line 12"-P-1213-A1A | 14d | 2026-08-31 | 2026-09-13 |  |  |  | piping | A3 | PIP-A3-1213-ERC |
| 262 | CGS-EXP-01.A3.PIP.1213 | Welding & NDT line 12"-P-1213-A1A | 17d | 2026-09-02 | 2026-09-18 | 261SS+2d |  |  | piping | A3 | PIP-A3-1213-WLD |
| 263 | CGS-EXP-01.A3.PIP.1213 | Hydrotest line 12"-P-1213-A1A (TP-021) | 2d | 2026-09-22 | 2026-09-23 | 262FS+3d |  |  | piping | A3 | PIP-A3-1213-HT |
| 264 | CGS-EXP-01.A3.PIP.1213 | Reinstatement line 12"-P-1213-A1A | 2d | 2026-09-25 | 2026-09-26 | 263FS+1d |  |  | piping | A3 | PIP-A3-1213-RST |
| 265 | CGS-EXP-01.A3.PIP.1215 | **Line 10"-W-1215-A1A** | 31d | 2026-09-03 | 2026-10-03 |  |  |  | piping | A3 |  |
| 266 | CGS-EXP-01.A3.PIP.1215 | Erect piping line 10"-W-1215-A1A | 18d | 2026-09-03 | 2026-09-20 |  |  |  | piping | A3 | PIP-A3-1215-ERC |
| 267 | CGS-EXP-01.A3.PIP.1215 | Welding & NDT line 10"-W-1215-A1A | 21d | 2026-09-05 | 2026-09-25 | 266SS+2d |  |  | piping | A3 | PIP-A3-1215-WLD |
| 268 | CGS-EXP-01.A3.PIP.1215 | Hydrotest line 10"-W-1215-A1A (TP-022) | 2d | 2026-09-29 | 2026-09-30 | 267FS+3d |  |  | piping | A3 | PIP-A3-1215-HT |
| 269 | CGS-EXP-01.A3.PIP.1215 | Reinstatement line 10"-W-1215-A1A | 2d | 2026-10-02 | 2026-10-03 | 268FS+1d |  |  | piping | A3 | PIP-A3-1215-RST |
| 270 | CGS-EXP-01.A3.PIP.1217 | **Line 8"-P-1217-A1A** | 27d | 2026-08-17 | 2026-09-12 |  |  |  | piping | A3 |  |
| 271 | CGS-EXP-01.A3.PIP.1217 | Erect piping line 8"-P-1217-A1A | 14d | 2026-08-17 | 2026-08-30 |  | 2026-08-18 |  | piping | A3 | PIP-A3-1217-ERC |
| 272 | CGS-EXP-01.A3.PIP.1217 | Welding & NDT line 8"-P-1217-A1A | 17d | 2026-08-19 | 2026-09-04 | 271SS+2d | 2026-08-20 |  | piping | A3 | PIP-A3-1217-WLD |
| 273 | CGS-EXP-01.A3.PIP.1217 | Hydrotest line 8"-P-1217-A1A (TP-023) | 2d | 2026-09-08 | 2026-09-09 | 272FS+3d |  |  | piping | A3 | PIP-A3-1217-HT |
| 274 | CGS-EXP-01.A3.PIP.1217 | Reinstatement line 8"-P-1217-A1A | 2d | 2026-09-11 | 2026-09-12 | 273FS+1d |  |  | piping | A3 | PIP-A3-1217-RST |
| 275 | CGS-EXP-01.A3.PIP.PS2 | **Pipe supports PR-2** | 24d | 2026-08-12 | 2026-09-04 |  |  |  | piping | A3 |  |
| 276 | CGS-EXP-01.A3.PIP.PS2 | Fabrication of pipe supports – pipe rack PR-2 | 10d | 2026-08-12 | 2026-08-21 |  | 2026-08-20 | 2026-08-31 | piping | A3 | PIP-A3-PS2-FAB |
| 277 | CGS-EXP-01.A3.PIP.PS2 | Erection of pipe supports – pipe rack PR-2 | 12d | 2026-08-24 | 2026-09-04 | 276FS+2d |  |  | piping | A3 | PIP-A3-PS2-PSE |
| 278 | CGS-EXP-01.A3.PIP.PS3 | **Pipe supports PR-3** | 24d | 2026-08-15 | 2026-09-07 |  |  |  | piping | A3 |  |
| 279 | CGS-EXP-01.A3.PIP.PS3 | Fabrication of pipe supports – pipe rack PR-3 | 10d | 2026-08-15 | 2026-08-24 |  | 2026-08-17 | 2026-08-25 | piping | A3 | PIP-A3-PS3-FAB |
| 280 | CGS-EXP-01.A3.PIP.PS3 | Erection of pipe supports – pipe rack PR-3 | 12d | 2026-08-27 | 2026-09-07 | 279FS+2d | 2026-08-31 |  | piping | A3 | PIP-A3-PS3-PSE |
| 281 | CGS-EXP-01.A3.SEQ | **Static Equipment – A3** | 20d | 2026-08-27 | 2026-09-15 |  |  |  | static_eq | A3 |  |
| 282 | CGS-EXP-01.A3.SEQ.E101 | **E-101 Crude Heat Exchanger** | 20d | 2026-08-27 | 2026-09-15 |  |  |  | static_eq | A3 |  |
| 283 | CGS-EXP-01.A3.SEQ.E101 | Receipt & inspection E-101 | 1d | 2026-08-27 | 2026-08-27 |  | 2026-08-31 | 2026-08-31 | static_eq | A3 | SEQ-A3-E101-RCV |
| 284 | CGS-EXP-01.A3.SEQ.E101 | Erection of crude heat exchanger E-101 on foundation | 2d | 2026-08-31 | 2026-09-01 | 283FS+3d, 222FS+10d |  |  | static_eq | A3 | SEQ-A3-E101-ERC |
| 285 | CGS-EXP-01.A3.SEQ.E101 | Alignment & grouting E-101 | 3d | 2026-09-04 | 2026-09-06 | 284FS+2d |  |  | static_eq | A3 | SEQ-A3-E101-GRT |
| 286 | CGS-EXP-01.A3.SEQ.E101 | Final box-up E-101 | 1d | 2026-09-15 | 2026-09-15 | 285FS+8d |  |  | static_eq | A3 | SEQ-A3-E101-BOX |

| ID | WBS | Task | Duration | Start | Finish | Predecessors | Discipline | Area | Activity ID |
| --- | --- | --- | --- | --- | --- | --- | --- | --- | --- |
| 287 | CGS-EXP-01.A3.ROT | **Rotating Equipment – A3** | 38d | 2026-08-29 | 2026-10-05 |  | rotating_eq | A3 |  |
| 288 | CGS-EXP-01.A3.ROT.P101A | **P-101A Crude Transfer Pump** | 30d | 2026-09-04 | 2026-10-03 |  | rotating_eq | A3 |  |
| 289 | CGS-EXP-01.A3.ROT.P101A | Setting of crude transfer pump P-101A on foundation | 1d | 2026-09-04 | 2026-09-04 | 198FS+10d | rotating_eq | A3 | ROT-A3-P101A-SET |
| 290 | CGS-EXP-01.A3.ROT.P101A | Grouting pump P-101A | 1d | 2026-09-07 | 2026-09-07 | 289FS+2d | rotating_eq | A3 | ROT-A3-P101A-GRT |
| 291 | CGS-EXP-01.A3.ROT.P101A | Final alignment pump P-101A | 2d | 2026-09-28 | 2026-09-29 | 290FS+20d | rotating_eq | A3 | ROT-A3-P101A-ALN |
| 292 | CGS-EXP-01.A3.ROT.P101A | Motor solo run P-101A | 1d | 2026-10-03 | 2026-10-03 | 291FS+3d | rotating_eq | A3 | ROT-A3-P101A-SOL |
| 293 | CGS-EXP-01.A3.ROT.P101B | **P-101B Crude Transfer Pump** | 30d | 2026-08-31 | 2026-09-29 |  | rotating_eq | A3 |  |
| 294 | CGS-EXP-01.A3.ROT.P101B | Setting of crude transfer pump P-101B on foundation | 1d | 2026-08-31 A | 2026-08-31 A | 204FS+10d | rotating_eq | A3 | ROT-A3-P101B-SET |
| 295 | CGS-EXP-01.A3.ROT.P101B | Grouting pump P-101B | 1d | 2026-09-03 | 2026-09-03 | 294FS+2d | rotating_eq | A3 | ROT-A3-P101B-GRT |
| 296 | CGS-EXP-01.A3.ROT.P101B | Final alignment pump P-101B | 2d | 2026-09-24 | 2026-09-25 | 295FS+20d | rotating_eq | A3 | ROT-A3-P101B-ALN |
| 297 | CGS-EXP-01.A3.ROT.P101B | Motor solo run P-101B | 1d | 2026-09-29 | 2026-09-29 | 296FS+3d | rotating_eq | A3 | ROT-A3-P101B-SOL |
| 298 | CGS-EXP-01.A3.ROT.P102A | **P-102A Produced Water Pump** | 30d | 2026-08-29 | 2026-09-27 |  | rotating_eq | A3 |  |
| 299 | CGS-EXP-01.A3.ROT.P102A | Setting of produced water pump P-102A on foundation | 1d | 2026-08-29 | 2026-08-29 | 210FS+10d | rotating_eq | A3 | ROT-A3-P102A-SET |
| 300 | CGS-EXP-01.A3.ROT.P102A | Grouting pump P-102A | 1d | 2026-09-01 | 2026-09-01 | 299FS+2d | rotating_eq | A3 | ROT-A3-P102A-GRT |
| 301 | CGS-EXP-01.A3.ROT.P102A | Final alignment pump P-102A | 2d | 2026-09-22 | 2026-09-23 | 300FS+20d | rotating_eq | A3 | ROT-A3-P102A-ALN |
| 302 | CGS-EXP-01.A3.ROT.P102A | Motor solo run P-102A | 1d | 2026-09-27 | 2026-09-27 | 301FS+3d | rotating_eq | A3 | ROT-A3-P102A-SOL |
| 303 | CGS-EXP-01.A3.ROT.P102B | **P-102B Produced Water Pump** | 30d | 2026-09-06 | 2026-10-05 |  | rotating_eq | A3 |  |
| 304 | CGS-EXP-01.A3.ROT.P102B | Setting of produced water pump P-102B on foundation | 1d | 2026-09-06 | 2026-09-06 | 216FS+10d | rotating_eq | A3 | ROT-A3-P102B-SET |
| 305 | CGS-EXP-01.A3.ROT.P102B | Grouting pump P-102B | 1d | 2026-09-09 | 2026-09-09 | 304FS+2d | rotating_eq | A3 | ROT-A3-P102B-GRT |
| 306 | CGS-EXP-01.A3.ROT.P102B | Final alignment pump P-102B | 2d | 2026-09-30 | 2026-10-01 | 305FS+20d | rotating_eq | A3 | ROT-A3-P102B-ALN |
| 307 | CGS-EXP-01.A3.ROT.P102B | Motor solo run P-102B | 1d | 2026-10-05 | 2026-10-05 | 306FS+3d | rotating_eq | A3 | ROT-A3-P102B-SOL |
| 308 | CGS-EXP-01.A3.ELE | **Electrical – A3** | 56d | 2026-08-17 | 2026-10-11 |  | electrical | A3 |  |
| 309 | CGS-EXP-01.A3.ELE.CLVA3 | **LV power cables Area-3** | 26d | 2026-09-03 | 2026-09-28 |  | electrical | A3 |  |
| 310 | CGS-EXP-01.A3.ELE.CLVA3 | Cable pulling – LV power cables Area-3 | 16d | 2026-09-03 | 2026-09-18 |  | electrical | A3 | ELE-A3-CLVA3-CBL |
| 311 | CGS-EXP-01.A3.ELE.CLVA3 | Glanding & termination – LV power cables Area-3 | 21d | 2026-09-08 | 2026-09-28 | 310SS+5d | electrical | A3 | ELE-A3-CLVA3-TRM |

| ID | WBS | Task | Duration | Start | Finish | Predecessors | Actual start | Actual finish | Discipline | Area | Activity ID |
| --- | --- | --- | --- | --- | --- | --- | --- | --- | --- | --- | --- |
| 312 | CGS-EXP-01.A3.ELE.ERT3 | **Earthing Area-3** | 12d | 2026-08-24 | 2026-09-04 |  |  |  | electrical | A3 |  |
| 313 | CGS-EXP-01.A3.ELE.ERT3 | Earthing – earth pits & grid, Area-3 | 12d | 2026-08-24 | 2026-09-04 |  | 2026-08-25 |  | electrical | A3 | ELE-A3-ERT3-ERT |
| 314 | CGS-EXP-01.A3.ELE.TRY3 | **Cable Tray Area-3** | 15d | 2026-08-17 | 2026-08-31 |  |  |  | electrical | A3 |  |
| 315 | CGS-EXP-01.A3.ELE.TRY3 | Cable tray erection, Area-3 | 15d | 2026-08-17 A | 2026-08-31 A |  |  |  | electrical | A3 | ELE-A3-TRY3-TRY |
| 316 | CGS-EXP-01.A3.ELE.LGT3 | **Area Lighting Area-3** | 10d | 2026-10-02 | 2026-10-11 |  |  |  | electrical | A3 |  |
| 317 | CGS-EXP-01.A3.ELE.LGT3 | Area lighting poles & fixtures, Area-3 | 10d | 2026-10-02 | 2026-10-11 |  |  |  | electrical | A3 | ELE-A3-LGT3-LGT |
| 318 | CGS-EXP-01.A3.INS | **Instrumentation – A3** | 54d | 2026-08-25 | 2026-10-17 |  |  |  | instrumentation | A3 |  |
| 319 | CGS-EXP-01.A3.INS.FT2031 | **FT-2031 Flow Transmitter** | 33d | 2026-08-29 | 2026-09-30 |  |  |  | instrumentation | A3 |  |
| 320 | CGS-EXP-01.A3.INS.FT2031 | Installation of flow transmitter FT-2031 | 2d | 2026-08-29 A | 2026-08-30 |  |  | 2026-08-31 | instrumentation | A3 | INS-A3-FT2031-INS |
| 321 | CGS-EXP-01.A3.INS.FT2031 | Impulse tubing FT-2031 | 3d | 2026-09-02 | 2026-09-04 | 320FS+2d |  |  | instrumentation | A3 | INS-A3-FT2031-TUB |
| 322 | CGS-EXP-01.A3.INS.FT2031 | Loop check FT-2031 | 1d | 2026-09-30 | 2026-09-30 | 321FS+25d |  |  | instrumentation | A3 | INS-A3-FT2031-LCK |
| 323 | CGS-EXP-01.A3.INS.PT2041 | **PT-2041 Pressure Transmitter** | 33d | 2026-09-07 | 2026-10-09 |  |  |  | instrumentation | A3 |  |
| 324 | CGS-EXP-01.A3.INS.PT2041 | Installation of pressure transmitter PT-2041 | 2d | 2026-09-07 | 2026-09-08 |  |  |  | instrumentation | A3 | INS-A3-PT2041-INS |
| 325 | CGS-EXP-01.A3.INS.PT2041 | Impulse tubing PT-2041 | 3d | 2026-09-11 | 2026-09-13 | 324FS+2d |  |  | instrumentation | A3 | INS-A3-PT2041-TUB |
| 326 | CGS-EXP-01.A3.INS.PT2041 | Loop check PT-2041 | 1d | 2026-10-09 | 2026-10-09 | 325FS+25d |  |  | instrumentation | A3 | INS-A3-PT2041-LCK |
| 327 | CGS-EXP-01.A3.INS.PT2042 | **PT-2042 Pressure Transmitter** | 33d | 2026-09-15 | 2026-10-17 |  |  |  | instrumentation | A3 |  |
| 328 | CGS-EXP-01.A3.INS.PT2042 | Installation of pressure transmitter PT-2042 | 2d | 2026-09-15 | 2026-09-16 |  |  |  | instrumentation | A3 | INS-A3-PT2042-INS |
| 329 | CGS-EXP-01.A3.INS.PT2042 | Impulse tubing PT-2042 | 3d | 2026-09-19 | 2026-09-21 | 328FS+2d |  |  | instrumentation | A3 | INS-A3-PT2042-TUB |
| 330 | CGS-EXP-01.A3.INS.PT2042 | Loop check PT-2042 | 1d | 2026-10-17 | 2026-10-17 | 329FS+25d |  |  | instrumentation | A3 | INS-A3-PT2042-LCK |
| 331 | CGS-EXP-01.A3.INS.TT2051 | **TT-2051 Temperature Transmitter** | 28d | 2026-09-15 | 2026-10-12 |  |  |  | instrumentation | A3 |  |
| 332 | CGS-EXP-01.A3.INS.TT2051 | Installation of temperature transmitter TT-2051 | 2d | 2026-09-15 | 2026-09-16 |  |  |  | instrumentation | A3 | INS-A3-TT2051-INS |
| 333 | CGS-EXP-01.A3.INS.TT2051 | Loop check TT-2051 | 1d | 2026-10-12 | 2026-10-12 | 332FS+25d |  |  | instrumentation | A3 | INS-A3-TT2051-LCK |
| 334 | CGS-EXP-01.A3.INS.FT2033 | **FT-2033 Flow Transmitter** | 33d | 2026-09-15 | 2026-10-17 |  |  |  | instrumentation | A3 |  |
| 335 | CGS-EXP-01.A3.INS.FT2033 | Installation of flow transmitter FT-2033 | 2d | 2026-09-15 | 2026-09-16 |  |  |  | instrumentation | A3 | INS-A3-FT2033-INS |
| 336 | CGS-EXP-01.A3.INS.FT2033 | Impulse tubing FT-2033 | 3d | 2026-09-19 | 2026-09-21 | 335FS+2d |  |  | instrumentation | A3 | INS-A3-FT2033-TUB |
| 337 | CGS-EXP-01.A3.INS.FT2033 | Loop check FT-2033 | 1d | 2026-10-17 | 2026-10-17 | 336FS+25d |  |  | instrumentation | A3 | INS-A3-FT2033-LCK |

| ID | WBS | Task | Duration | Start | Finish | Predecessors | Actual start | Actual finish | Discipline | Area | Activity ID |
| --- | --- | --- | --- | --- | --- | --- | --- | --- | --- | --- | --- |
| 338 | CGS-EXP-01.A3.INS.JB301 | **Junction box JB-301** | 2d | 2026-08-28 | 2026-08-29 |  |  |  | instrumentation | A3 |  |
| 339 | CGS-EXP-01.A3.INS.JB301 | Installation of junction box JB-301 | 2d | 2026-08-28 | 2026-08-29 A |  | 2026-08-27 |  | instrumentation | A3 | INS-A3-JB301-INS |
| 340 | CGS-EXP-01.A3.INS.JB302 | **Junction box JB-302** | 2d | 2026-08-25 | 2026-08-26 |  |  |  | instrumentation | A3 |  |
| 341 | CGS-EXP-01.A3.INS.JB302 | Installation of junction box JB-302 | 2d | 2026-08-25 | 2026-08-26 |  | 2026-08-26 | 2026-08-27 | instrumentation | A3 | INS-A3-JB302-INS |
| 342 | CGS-EXP-01.A3.INS.JB303 | **Junction box JB-303** | 2d | 2026-08-26 | 2026-08-27 |  |  |  | instrumentation | A3 |  |
| 343 | CGS-EXP-01.A3.INS.JB303 | Installation of junction box JB-303 | 2d | 2026-08-26 | 2026-08-27 |  | 2026-08-28 | 2026-08-29 | instrumentation | A3 | INS-A3-JB303-INS |
| 344 | CGS-EXP-01.A3.INS.JB304 | **Junction box JB-304** | 2d | 2026-08-30 | 2026-08-31 |  |  |  | instrumentation | A3 |  |
| 345 | CGS-EXP-01.A3.INS.JB304 | Installation of junction box JB-304 | 2d | 2026-08-30 | 2026-08-31 |  |  |  | instrumentation | A3 | INS-A3-JB304-INS |
| 346 | CGS-EXP-01.A3.INS.ICB3 | **Instrument cables Area-3** | 12d | 2026-09-04 | 2026-09-15 |  |  |  | instrumentation | A3 |  |
| 347 | CGS-EXP-01.A3.INS.ICB3 | Instrument cable laying, Area-3 | 12d | 2026-09-04 | 2026-09-15 |  |  |  | instrumentation | A3 | INS-A3-ICB3-ICB |
| 348 | CGS-EXP-01.A3.HSE | **HSE & Fire Protection – A3** | 50d | 2026-09-02 | 2026-10-21 |  |  |  | hse | A3 |  |
| 349 | CGS-EXP-01.A3.HSE.GD301 | **Gas detector GD-301** | 1d | 2026-09-05 | 2026-09-05 |  |  |  | hse | A3 |  |
| 350 | CGS-EXP-01.A3.HSE.GD301 | Installation of gas detector GD-301 | 1d | 2026-09-05 | 2026-09-05 |  |  |  | hse | A3 | HSE-A3-GD301-INS |
| 351 | CGS-EXP-01.A3.HSE.GD302 | **Gas detector GD-302** | 1d | 2026-09-02 | 2026-09-02 |  |  |  | hse | A3 |  |
| 352 | CGS-EXP-01.A3.HSE.GD302 | Installation of gas detector GD-302 | 1d | 2026-09-02 | 2026-09-02 |  |  |  | hse | A3 | HSE-A3-GD302-INS |
| 353 | CGS-EXP-01.A3.HSE.HYD3 | **Fire hydrants Area-3** | 10d | 2026-09-03 | 2026-09-12 |  |  |  | hse | A3 |  |
| 354 | CGS-EXP-01.A3.HSE.HYD3 | Fire hydrants & monitors, Area-3 | 10d | 2026-09-03 | 2026-09-12 |  |  |  | hse | A3 | HSE-A3-HYD3-HYD |
| 355 | CGS-EXP-01.A3.HSE.SS301 | **Safety shower SS-301** | 2d | 2026-09-06 | 2026-09-07 |  |  |  | hse | A3 |  |
| 356 | CGS-EXP-01.A3.HSE.SS301 | Installation of safety shower & eyewash SS-301 | 2d | 2026-09-06 | 2026-09-07 |  |  |  | hse | A3 | HSE-A3-SS301-INS |
| 357 | CGS-EXP-01.A3.HSE.FGL3 | **F&G loop check Area-3** | 5d | 2026-10-17 | 2026-10-21 |  |  |  | hse | A3 |  |
| 358 | CGS-EXP-01.A3.HSE.FGL3 | F&G system loop check, Area-3 | 5d | 2026-10-17 | 2026-10-21 |  |  |  | hse | A3 | HSE-A3-FGL3-FGL |
| 359 | CGS-EXP-01.A4 | **A4 – Tank Farm & Utilities** | 99d | 2026-07-10 | 2026-10-16 |  |  |  |  | A4 |  |
| 360 | CGS-EXP-01.A4.CIV | **Civil & Structural – A4** | 64d | 2026-07-10 | 2026-09-11 |  |  |  | civil | A4 |  |
| 361 | CGS-EXP-01.A4.CIV.P201A | **Foundation P-201A (fire water pump)** | 21d | 2026-07-22 | 2026-08-11 |  |  |  | civil | A4 |  |
| 362 | CGS-EXP-01.A4.CIV.P201A | Excavation for foundation P-201A | 3d | 2026-07-22 A | 2026-07-24 A |  |  |  | civil | A4 | CIV-A4-P201A-EXC |
| 363 | CGS-EXP-01.A4.CIV.P201A | PCC for foundation P-201A | 1d | 2026-07-25 | 2026-07-25 | 362 | 2026-07-27 | 2026-07-27 | civil | A4 | CIV-A4-P201A-PCC |
| 364 | CGS-EXP-01.A4.CIV.P201A | Reinforcement & shuttering foundation P-201A | 4d | 2026-07-27 | 2026-07-30 | 363FS+1d | 2026-07-29 | 2026-08-01 | civil | A4 | CIV-A4-P201A-REB |
| 365 | CGS-EXP-01.A4.CIV.P201A | RCC concreting foundation P-201A | 2d | 2026-07-31 | 2026-08-01 | 364 | 2026-08-03 | 2026-08-04 | civil | A4 | CIV-A4-P201A-RCC |
| 366 | CGS-EXP-01.A4.CIV.P201A | Backfilling around foundation P-201A | 3d | 2026-08-09 | 2026-08-11 | 365FS+7d | 2026-08-12 | 2026-08-14 | civil | A4 | CIV-A4-P201A-BKF |

| ID | WBS | Task | Duration | Start | Finish | Predecessors | Actual start | Actual finish | Discipline | Area | Activity ID |
| --- | --- | --- | --- | --- | --- | --- | --- | --- | --- | --- | --- |
| 367 | CGS-EXP-01.A4.CIV.P201B | **Foundation P-201B (fire water pump)** | 21d | 2026-07-23 | 2026-08-12 |  |  |  | civil | A4 |  |
| 368 | CGS-EXP-01.A4.CIV.P201B | Excavation for foundation P-201B | 3d | 2026-07-23 | 2026-07-25 |  | 2026-07-24 | 2026-07-27 | civil | A4 | CIV-A4-P201B-EXC |
| 369 | CGS-EXP-01.A4.CIV.P201B | PCC for foundation P-201B | 1d | 2026-07-26 | 2026-07-26 | 368 | 2026-07-28 | 2026-07-28 | civil | A4 | CIV-A4-P201B-PCC |
| 370 | CGS-EXP-01.A4.CIV.P201B | Reinforcement & shuttering foundation P-201B | 4d | 2026-07-28 | 2026-07-31 | 369FS+1d | 2026-07-30 | 2026-08-01 | civil | A4 | CIV-A4-P201B-REB |
| 371 | CGS-EXP-01.A4.CIV.P201B | RCC concreting foundation P-201B | 2d | 2026-08-01 | 2026-08-02 | 370 | 2026-08-03 | 2026-08-05 | civil | A4 | CIV-A4-P201B-RCC |
| 372 | CGS-EXP-01.A4.CIV.P201B | Backfilling around foundation P-201B | 3d | 2026-08-10 | 2026-08-12 | 371FS+7d | 2026-08-13 | 2026-08-15 | civil | A4 | CIV-A4-P201B-BKF |
| 373 | CGS-EXP-01.A4.CIV.T401 | **Foundation T-401 (crude storage tank)** | 21d | 2026-07-12 | 2026-08-01 |  |  |  | civil | A4 |  |
| 374 | CGS-EXP-01.A4.CIV.T401 | Excavation for foundation T-401 | 3d | 2026-07-12 | 2026-07-14 |  | 2026-07-23 | 2026-07-27 | civil | A4 | CIV-A4-T401-EXC |
| 375 | CGS-EXP-01.A4.CIV.T401 | PCC for foundation T-401 | 1d | 2026-07-15 | 2026-07-15 | 374 | 2026-07-28 | 2026-07-28 | civil | A4 | CIV-A4-T401-PCC |
| 376 | CGS-EXP-01.A4.CIV.T401 | Reinforcement & shuttering foundation T-401 | 4d | 2026-07-17 | 2026-07-20 | 375FS+1d | 2026-07-30 | 2026-08-03 | civil | A4 | CIV-A4-T401-REB |
| 377 | CGS-EXP-01.A4.CIV.T401 | RCC concreting foundation T-401 | 2d | 2026-07-21 | 2026-07-22 | 376 | 2026-08-04 | 2026-08-05 | civil | A4 | CIV-A4-T401-RCC |
| 378 | CGS-EXP-01.A4.CIV.T401 | Backfilling around foundation T-401 | 3d | 2026-07-30 | 2026-08-01 | 377FS+7d | 2026-08-13 | 2026-08-15 | civil | A4 | CIV-A4-T401-BKF |
| 379 | CGS-EXP-01.A4.CIV.T402 | **Foundation T-402 (crude storage tank)** | 21d | 2026-07-10 | 2026-07-30 |  |  |  | civil | A4 |  |
| 380 | CGS-EXP-01.A4.CIV.T402 | Excavation for foundation T-402 | 3d | 2026-07-10 A | 2026-07-12 |  |  | 2026-07-13 | civil | A4 | CIV-A4-T402-EXC |
| 381 | CGS-EXP-01.A4.CIV.T402 | PCC for foundation T-402 | 1d | 2026-07-13 | 2026-07-13 | 380 | 2026-07-14 | 2026-07-14 | civil | A4 | CIV-A4-T402-PCC |
| 382 | CGS-EXP-01.A4.CIV.T402 | Reinforcement & shuttering foundation T-402 | 4d | 2026-07-15 | 2026-07-18 | 381FS+1d | 2026-07-17 | 2026-07-21 | civil | A4 | CIV-A4-T402-REB |
| 383 | CGS-EXP-01.A4.CIV.T402 | RCC concreting foundation T-402 | 2d | 2026-07-19 | 2026-07-20 | 382 | 2026-07-23 | 2026-07-24 | civil | A4 | CIV-A4-T402-RCC |
| 384 | CGS-EXP-01.A4.CIV.T402 | Backfilling around foundation T-402 | 3d | 2026-07-28 | 2026-07-30 | 383FS+7d | 2026-08-03 | 2026-08-05 | civil | A4 | CIV-A4-T402-BKF |
| 385 | CGS-EXP-01.A4.CIV.PR4 | **Pipe rack PR-4** | 30d | 2026-07-18 | 2026-08-16 |  |  |  | civil | A4 |  |
| 386 | CGS-EXP-01.A4.CIV.PR4 | Excavation & PCC for pipe rack PR-4 footings | 6d | 2026-07-18 | 2026-07-23 |  | 2026-07-27 | 2026-08-03 | civil | A4 | CIV-A4-PR4-FTG |
| 387 | CGS-EXP-01.A4.CIV.PR4 | RCC footings & pedestals pipe rack PR-4 | 8d | 2026-07-25 | 2026-08-01 | 386FS+1d | 2026-08-05 | 2026-08-15 | civil | A4 | CIV-A4-PR4-PED |
| 388 | CGS-EXP-01.A4.CIV.PR4 | Structural steel erection pipe rack PR-4 | 10d | 2026-08-07 | 2026-08-16 | 387FS+5d | 2026-08-21 | 2026-08-29 | civil | A4 | CIV-A4-PR4-STL |
| 389 | CGS-EXP-01.A4.CIV.SWD4 | **Storm water drain Area-4** | 12d | 2026-08-31 | 2026-09-11 |  |  |  | civil | A4 |  |
| 390 | CGS-EXP-01.A4.CIV.SWD4 | Storm water drain – Area-4 | 12d | 2026-08-31 | 2026-09-11 |  |  |  | civil | A4 | CIV-A4-SWD4-SWD |

| ID | WBS | Task | Duration | Start | Finish | Predecessors | Actual start | Actual finish | Discipline | Area | Activity ID |
| --- | --- | --- | --- | --- | --- | --- | --- | --- | --- | --- | --- |
| 391 | CGS-EXP-01.A4.PIP | **Piping – A4** | 71d | 2026-08-07 | 2026-10-16 |  |  |  | piping | A4 |  |
| 392 | CGS-EXP-01.A4.PIP.1401 | **Line 20"-P-1401-A1A** | 27d | 2026-09-20 | 2026-10-16 |  |  |  | piping | A4 |  |
| 393 | CGS-EXP-01.A4.PIP.1401 | Erect piping line 20"-P-1401-A1A | 14d | 2026-09-20 | 2026-10-03 |  |  |  | piping | A4 | PIP-A4-1401-ERC |
| 394 | CGS-EXP-01.A4.PIP.1401 | Welding & NDT line 20"-P-1401-A1A | 17d | 2026-09-22 | 2026-10-08 | 393SS+2d |  |  | piping | A4 | PIP-A4-1401-WLD |
| 395 | CGS-EXP-01.A4.PIP.1401 | Hydrotest line 20"-P-1401-A1A (TP-024) | 2d | 2026-10-12 | 2026-10-13 | 394FS+3d |  |  | piping | A4 | PIP-A4-1401-HT |
| 396 | CGS-EXP-01.A4.PIP.1401 | Reinstatement line 20"-P-1401-A1A | 2d | 2026-10-15 | 2026-10-16 | 395FS+1d |  |  | piping | A4 | PIP-A4-1401-RST |
| 397 | CGS-EXP-01.A4.PIP.1403 | **Line 16"-P-1403-A1A** | 21d | 2026-09-15 | 2026-10-05 |  |  |  | piping | A4 |  |
| 398 | CGS-EXP-01.A4.PIP.1403 | Erect piping line 16"-P-1403-A1A | 8d | 2026-09-15 | 2026-09-22 |  |  |  | piping | A4 | PIP-A4-1403-ERC |
| 399 | CGS-EXP-01.A4.PIP.1403 | Welding & NDT line 16"-P-1403-A1A | 11d | 2026-09-17 | 2026-09-27 | 398SS+2d |  |  | piping | A4 | PIP-A4-1403-WLD |
| 400 | CGS-EXP-01.A4.PIP.1403 | Hydrotest line 16"-P-1403-A1A (TP-025) | 2d | 2026-10-01 | 2026-10-02 | 399FS+3d |  |  | piping | A4 | PIP-A4-1403-HT |
| 401 | CGS-EXP-01.A4.PIP.1403 | Reinstatement line 16"-P-1403-A1A | 2d | 2026-10-04 | 2026-10-05 | 400FS+1d |  |  | piping | A4 | PIP-A4-1403-RST |
| 402 | CGS-EXP-01.A4.PIP.1405 | **Line 10"-W-1405-A1A** | 27d | 2026-08-30 | 2026-09-25 |  |  |  | piping | A4 |  |
| 403 | CGS-EXP-01.A4.PIP.1405 | Erect piping line 10"-W-1405-A1A | 14d | 2026-08-30 | 2026-09-12 |  |  |  | piping | A4 | PIP-A4-1405-ERC |
| 404 | CGS-EXP-01.A4.PIP.1405 | Welding & NDT line 10"-W-1405-A1A | 17d | 2026-09-01 | 2026-09-17 | 403SS+2d |  |  | piping | A4 | PIP-A4-1405-WLD |
| 405 | CGS-EXP-01.A4.PIP.1405 | Hydrotest line 10"-W-1405-A1A (TP-026) | 2d | 2026-09-21 | 2026-09-22 | 404FS+3d |  |  | piping | A4 | PIP-A4-1405-HT |
| 406 | CGS-EXP-01.A4.PIP.1405 | Reinstatement line 10"-W-1405-A1A | 2d | 2026-09-24 | 2026-09-25 | 405FS+1d |  |  | piping | A4 | PIP-A4-1405-RST |
| 407 | CGS-EXP-01.A4.PIP.1407 | **Line 8"-F-1407-F1A** | 27d | 2026-08-16 | 2026-09-11 |  |  |  | piping | A4 |  |
| 408 | CGS-EXP-01.A4.PIP.1407 | Erect piping line 8"-F-1407-F1A | 14d | 2026-08-16 | 2026-08-29 |  | 2026-08-17 |  | piping | A4 | PIP-A4-1407-ERC |
| 409 | CGS-EXP-01.A4.PIP.1407 | Welding & NDT line 8"-F-1407-F1A | 17d | 2026-08-18 | 2026-09-03 | 408SS+2d | 2026-08-19 |  | piping | A4 | PIP-A4-1407-WLD |
| 410 | CGS-EXP-01.A4.PIP.1407 | Hydrotest line 8"-F-1407-F1A (TP-027) | 2d | 2026-09-07 | 2026-09-08 | 409FS+3d |  |  | piping | A4 | PIP-A4-1407-HT |
| 411 | CGS-EXP-01.A4.PIP.1407 | Reinstatement line 8"-F-1407-F1A | 2d | 2026-09-10 | 2026-09-11 | 410FS+1d |  |  | piping | A4 | PIP-A4-1407-RST |
| 412 | CGS-EXP-01.A4.PIP.PS4 | **Pipe supports PR-4** | 24d | 2026-08-07 | 2026-08-30 |  |  |  | piping | A4 |  |
| 413 | CGS-EXP-01.A4.PIP.PS4 | Fabrication of pipe supports – pipe rack PR-4 | 10d | 2026-08-07 A | 2026-08-16 |  |  | 2026-08-17 | piping | A4 | PIP-A4-PS4-FAB |
| 414 | CGS-EXP-01.A4.PIP.PS4 | Erection of pipe supports – pipe rack PR-4 | 12d | 2026-08-19 | 2026-08-30 | 413FS+2d | 2026-08-20 |  | piping | A4 | PIP-A4-PS4-PSE |

| ID | WBS | Task | Duration | Start | Finish | Predecessors | Actual start | Actual finish | Discipline | Area | Activity ID |
| --- | --- | --- | --- | --- | --- | --- | --- | --- | --- | --- | --- |
| 415 | CGS-EXP-01.A4.SEQ | **Static Equipment – A4** | 70d | 2026-08-02 | 2026-10-10 |  |  |  | static_eq | A4 |  |
| 416 | CGS-EXP-01.A4.SEQ.T401 | **T-401 Crude Storage Tank** | 68d | 2026-08-04 | 2026-10-10 |  |  |  | static_eq | A4 |  |
| 417 | CGS-EXP-01.A4.SEQ.T401 | **Mechanical erection T-401** | 68d | 2026-08-04 | 2026-10-10 |  |  |  | static_eq | A4 |  |
| 418 | CGS-EXP-01.A4.SEQ.T401 | Annular & bottom plate laying T-401 | 10d | 2026-08-04 | 2026-08-13 | 378FS+2d | 2026-08-18 | 2026-08-28 | static_eq | A4 | SEQ-A4-T401-BTM |
| 419 | CGS-EXP-01.A4.SEQ.T401 | Shell erection courses 1–3 T-401 | 15d | 2026-08-15 | 2026-08-29 | 418FS+1d | 2026-08-31 |  | static_eq | A4 | SEQ-A4-T401-SH1 |
| 420 | CGS-EXP-01.A4.SEQ.T401 | Shell erection courses 4–6 T-401 | 15d | 2026-08-31 | 2026-09-14 | 419FS+1d |  |  | static_eq | A4 | SEQ-A4-T401-SH2 |
| 421 | CGS-EXP-01.A4.SEQ.T401 | Roof structure & sheeting T-401 | 12d | 2026-09-17 | 2026-09-28 | 420FS+2d |  |  | static_eq | A4 | SEQ-A4-T401-ROF |
| 422 | CGS-EXP-01.A4.SEQ.T401 | Tank hydrotest T-401 | 7d | 2026-10-04 | 2026-10-10 | 421FS+5d |  |  | static_eq | A4 | SEQ-A4-T401-HT |
| 423 | CGS-EXP-01.A4.SEQ.T402 | **T-402 Crude Storage Tank** | 68d | 2026-08-02 | 2026-10-08 |  |  |  | static_eq | A4 |  |
| 424 | CGS-EXP-01.A4.SEQ.T402 | **Mechanical erection T-402** | 68d | 2026-08-02 | 2026-10-08 |  |  |  | static_eq | A4 |  |
| 425 | CGS-EXP-01.A4.SEQ.T402 | Annular & bottom plate laying T-402 | 10d | 2026-08-02 | 2026-08-11 | 384FS+2d | 2026-08-13 | 2026-08-26 | static_eq | A4 | SEQ-A4-T402-BTM |
| 426 | CGS-EXP-01.A4.SEQ.T402 | Shell erection courses 1–3 T-402 | 15d | 2026-08-13 | 2026-08-27 | 425FS+1d | 2026-08-28 |  | static_eq | A4 | SEQ-A4-T402-SH1 |
| 427 | CGS-EXP-01.A4.SEQ.T402 | Shell erection courses 4–6 T-402 | 15d | 2026-08-29 | 2026-09-12 | 426FS+1d |  |  | static_eq | A4 | SEQ-A4-T402-SH2 |
| 428 | CGS-EXP-01.A4.SEQ.T402 | Roof structure & sheeting T-402 | 12d | 2026-09-15 | 2026-09-26 | 427FS+2d |  |  | static_eq | A4 | SEQ-A4-T402-ROF |
| 429 | CGS-EXP-01.A4.SEQ.T402 | Tank hydrotest T-402 | 7d | 2026-10-02 | 2026-10-08 | 428FS+5d |  |  | static_eq | A4 | SEQ-A4-T402-HT |
| 430 | CGS-EXP-01.A4.ROT | **Rotating Equipment – A4** | 40d | 2026-08-29 | 2026-10-07 |  |  |  | rotating_eq | A4 |  |
| 431 | CGS-EXP-01.A4.ROT.P201A | **P-201A Fire Water Pump** | 30d | 2026-09-08 | 2026-10-07 |  |  |  | rotating_eq | A4 |  |
| 432 | CGS-EXP-01.A4.ROT.P201A | Setting of fire water pump P-201A on foundation | 1d | 2026-09-08 | 2026-09-08 | 365FS+10d |  |  | rotating_eq | A4 | ROT-A4-P201A-SET |
| 433 | CGS-EXP-01.A4.ROT.P201A | Grouting pump P-201A | 1d | 2026-09-11 | 2026-09-11 | 432FS+2d |  |  | rotating_eq | A4 | ROT-A4-P201A-GRT |
| 434 | CGS-EXP-01.A4.ROT.P201A | Final alignment pump P-201A | 2d | 2026-10-02 | 2026-10-03 | 433FS+20d |  |  | rotating_eq | A4 | ROT-A4-P201A-ALN |
| 435 | CGS-EXP-01.A4.ROT.P201A | Motor solo run P-201A | 1d | 2026-10-07 | 2026-10-07 | 434FS+3d |  |  | rotating_eq | A4 | ROT-A4-P201A-SOL |
| 436 | CGS-EXP-01.A4.ROT.P201B | **P-201B Fire Water Pump** | 30d | 2026-08-29 | 2026-09-27 |  |  |  | rotating_eq | A4 |  |
| 437 | CGS-EXP-01.A4.ROT.P201B | Setting of fire water pump P-201B on foundation | 1d | 2026-08-29 | 2026-08-29 | 371FS+10d |  |  | rotating_eq | A4 | ROT-A4-P201B-SET |
| 438 | CGS-EXP-01.A4.ROT.P201B | Grouting pump P-201B | 1d | 2026-09-01 | 2026-09-01 | 437FS+2d |  |  | rotating_eq | A4 | ROT-A4-P201B-GRT |
| 439 | CGS-EXP-01.A4.ROT.P201B | Final alignment pump P-201B | 2d | 2026-09-22 | 2026-09-23 | 438FS+20d |  |  | rotating_eq | A4 | ROT-A4-P201B-ALN |
| 440 | CGS-EXP-01.A4.ROT.P201B | Motor solo run P-201B | 1d | 2026-09-27 | 2026-09-27 | 439FS+3d |  |  | rotating_eq | A4 | ROT-A4-P201B-SOL |

| ID | WBS | Task | Duration | Start | Finish | Predecessors | Actual start | Actual finish | Discipline | Area | Activity ID |
| --- | --- | --- | --- | --- | --- | --- | --- | --- | --- | --- | --- |
| 441 | CGS-EXP-01.A4.ELE | **Electrical – A4** | 50d | 2026-08-16 | 2026-10-04 |  |  |  | electrical | A4 |  |
| 442 | CGS-EXP-01.A4.ELE.CLVA4 | **LV power cables Area-4** | 26d | 2026-09-09 | 2026-10-04 |  |  |  | electrical | A4 |  |
| 443 | CGS-EXP-01.A4.ELE.CLVA4 | Cable pulling – LV power cables Area-4 | 16d | 2026-09-09 | 2026-09-24 |  |  |  | electrical | A4 | ELE-A4-CLVA4-CBL |
| 444 | CGS-EXP-01.A4.ELE.CLVA4 | Glanding & termination – LV power cables Area-4 | 21d | 2026-09-14 | 2026-10-04 | 443SS+5d |  |  | electrical | A4 | ELE-A4-CLVA4-TRM |
| 445 | CGS-EXP-01.A4.ELE.ERT4 | **Earthing Area-4** | 12d | 2026-08-17 | 2026-08-28 |  |  |  | electrical | A4 |  |
| 446 | CGS-EXP-01.A4.ELE.ERT4 | Earthing – earth pits & grid, Area-4 | 12d | 2026-08-17 | 2026-08-28 |  | 2026-08-15 | 2026-08-27 | electrical | A4 | ELE-A4-ERT4-ERT |
| 447 | CGS-EXP-01.A4.ELE.TRY4 | **Cable Tray Area-4** | 15d | 2026-08-16 | 2026-08-30 |  |  |  | electrical | A4 |  |
| 448 | CGS-EXP-01.A4.ELE.TRY4 | Cable tray erection, Area-4 | 15d | 2026-08-16 | 2026-08-30 |  | 2026-08-17 | 2026-08-29 | electrical | A4 | ELE-A4-TRY4-TRY |
| 449 | CGS-EXP-01.A4.ELE.LGT4 | **Area Lighting Area-4** | 10d | 2026-09-19 | 2026-09-28 |  |  |  | electrical | A4 |  |
| 450 | CGS-EXP-01.A4.ELE.LGT4 | Area lighting poles & fixtures, Area-4 | 10d | 2026-09-19 | 2026-09-28 |  |  |  | electrical | A4 | ELE-A4-LGT4-LGT |
| 451 | CGS-EXP-01.A4.INS | **Instrumentation – A4** | 52d | 2026-08-25 | 2026-10-15 |  |  |  | instrumentation | A4 |  |
| 452 | CGS-EXP-01.A4.INS.LT4011 | **LT-4011 Level Transmitter** | 33d | 2026-08-28 | 2026-09-29 |  |  |  | instrumentation | A4 |  |
| 453 | CGS-EXP-01.A4.INS.LT4011 | Installation of level transmitter LT-4011 | 2d | 2026-08-28 | 2026-08-29 |  | 2026-08-31 |  | instrumentation | A4 | INS-A4-LT4011-INS |
| 454 | CGS-EXP-01.A4.INS.LT4011 | Impulse tubing LT-4011 | 3d | 2026-09-01 | 2026-09-03 | 453FS+2d |  |  | instrumentation | A4 | INS-A4-LT4011-TUB |
| 455 | CGS-EXP-01.A4.INS.LT4011 | Loop check LT-4011 | 1d | 2026-09-29 | 2026-09-29 | 454FS+25d |  |  | instrumentation | A4 | INS-A4-LT4011-LCK |
| 456 | CGS-EXP-01.A4.INS.LT4012 | **LT-4012 Level Transmitter** | 33d | 2026-09-13 | 2026-10-15 |  |  |  | instrumentation | A4 |  |
| 457 | CGS-EXP-01.A4.INS.LT4012 | Installation of level transmitter LT-4012 | 2d | 2026-09-13 | 2026-09-14 |  |  |  | instrumentation | A4 | INS-A4-LT4012-INS |
| 458 | CGS-EXP-01.A4.INS.LT4012 | Impulse tubing LT-4012 | 3d | 2026-09-17 | 2026-09-19 | 457FS+2d |  |  | instrumentation | A4 | INS-A4-LT4012-TUB |
| 459 | CGS-EXP-01.A4.INS.LT4012 | Loop check LT-4012 | 1d | 2026-10-15 | 2026-10-15 | 458FS+25d |  |  | instrumentation | A4 | INS-A4-LT4012-LCK |
| 460 | CGS-EXP-01.A4.INS.TT4013 | **TT-4013 Temperature Transmitter** | 28d | 2026-09-13 | 2026-10-10 |  |  |  | instrumentation | A4 |  |
| 461 | CGS-EXP-01.A4.INS.TT4013 | Installation of temperature transmitter TT-4013 | 2d | 2026-09-13 | 2026-09-14 |  |  |  | instrumentation | A4 | INS-A4-TT4013-INS |
| 462 | CGS-EXP-01.A4.INS.TT4013 | Loop check TT-4013 | 1d | 2026-10-10 | 2026-10-10 | 461FS+25d |  |  | instrumentation | A4 | INS-A4-TT4013-LCK |
| 463 | CGS-EXP-01.A4.INS.JB401 | **Junction box JB-401** | 2d | 2026-08-25 | 2026-08-26 |  |  |  | instrumentation | A4 |  |
| 464 | CGS-EXP-01.A4.INS.JB401 | Installation of junction box JB-401 | 2d | 2026-08-25 | 2026-08-26 |  |  |  | instrumentation | A4 | INS-A4-JB401-INS |

| ID | WBS | Task | Duration | Start | Finish | Discipline | Area | Activity ID |
| --- | --- | --- | --- | --- | --- | --- | --- | --- |
| 465 | CGS-EXP-01.A4.INS.ICB4 | **Instrument cables Area-4** | 12d | 2026-09-12 | 2026-09-23 | instrumentation | A4 |  |
| 466 | CGS-EXP-01.A4.INS.ICB4 | Instrument cable laying, Area-4 | 12d | 2026-09-12 | 2026-09-23 | instrumentation | A4 | INS-A4-ICB4-ICB |
| 467 | CGS-EXP-01.A4.HSE | **HSE & Fire Protection – A4** | 10d | 2026-09-12 | 2026-09-21 | hse | A4 |  |
| 468 | CGS-EXP-01.A4.HSE.HYD4 | **Fire hydrants Area-4** | 10d | 2026-09-12 | 2026-09-21 | hse | A4 |  |
| 469 | CGS-EXP-01.A4.HSE.HYD4 | Fire hydrants & monitors, Area-4 | 10d | 2026-09-12 | 2026-09-21 | hse | A4 | HSE-A4-HYD4-HYD |
